# EDU_PDT_ESTANDAR v2.0

How a schedule from MS Project changed from version to version. A marks actual dates.

## Version 1 (data date 2024-10-12, saved 2024-10-17, file version1.mpp)

Note of the change: add new fns

| ID | WBS | Task | Duration | Start | Finish | Predecessors | Complete | Total float | Constraint |
| --- | --- | --- | --- | --- | --- | --- | --- | --- | --- |
| 1 | 1 | **S.E. VENTANITAS** | 87d? | 2024-09-12 09:00 A | 2025-01-10 19:00 |  | 30% | 0d |  |
| 2 |  | INICIO | 0d | 2024-09-12 19:00 | 2024-09-12 19:00 |  |  | 86d | finish no earlier than 2024-09-12 19:00 |
| 3 | 1.2 | **Bloque 2** | 20d | 2024-09-24 09:00 A | 2024-10-21 19:00 |  | 71% | 59d |  |
| 4 | 1.2.1 | **Piso 1** | 20d | 2024-09-24 09:00 A | 2024-10-21 19:00 |  | 71% | 59d |  |
| 5 | 1.2.1.1 | **Aula 3** | 6.5d | 2024-09-24 09:00 A | 2024-10-02 13:00 |  | 95% | 72.5d |  |
| 6 | 1.2.1.1.1 | **Cubiertas** | 6.5d | 2024-09-24 09:00 A | 2024-10-02 13:00 |  | 95% | 72.5d |  |
| 7 | 1.2.1.1.1.1 | **Canoas** | 5.5d | 2024-09-24 09:00 A | 2024-10-01 13:00 A |  | 100% |  |  |
| 8 |  | Retiro de canoas | 1d | 2024-09-24 09:00 A | 2024-09-24 19:00 A | 359SS+8d | 100% |  |  |
| 9 |  | Suministro y colocación de canoa en U en lamina galvanizada calibre 24 moldurada, grafada y soldada en las uniones, desarrollo 0.70 m., incluye:embudos, boquillas, tapas, ganchos de fijación, pintura anticorrosiva verde y de acabado color a definir por in | 2d | 2024-09-27 15:00 A | 2024-10-01 13:00 A | 14 | 100% |  |  |
| 10 | 1.2.1.1.1.2 | **Ruanas** | 6.5d | 2024-09-24 09:00 A | 2024-10-02 13:00 A |  | 100% |  |  |
| 11 |  | Retiro de ruanas | 1.5d | 2024-09-24 09:00 A | 2024-09-25 13:00 A | 8SS | 100% |  |  |
| 12 |  | Suministro y colocación de ruanas en lámina galvanizada calibre 24, incluye mortero, pintura anticorrosiva y a base de aceite, desarrollo 33 cm., pestaña de 5 cm. Canchada de muro, faja en revoque impermeabilizado con filete y todo lo necesario para su co | 1d | 2024-10-01 15:00 A | 2024-10-02 13:00 A | 9 | 100% |  |  |
| 13 | 1.2.1.1.1.3 | **Mantenimiento** | 3.5d | 2024-09-24 09:00 A | 2024-09-27 13:00 A |  | 100% |  |  |
| 14 |  | Reparación de techo en teja de barro. Incluye: retiro de manto existente si es necesario, retiro de teja existente, reistalación de la misma, suministro y colocación de teja (del 20%), tablilla (del 100 %) , impermeabilización con manto asfaltico imperpol | 3.5d | 2024-09-24 09:00 A | 2024-09-27 13:00 A | 11SS | 100% |  |  |
| 15 |  | Retiro de bajantes | 0.5d | 2024-09-25 09:00 | 2024-09-25 13:00 | 8 |  | 77.5d |  |
| 16 | 1.2.1.2 | **Aula 4** | 6d | 2024-10-02 15:00 A | 2024-10-10 13:00 |  | 56% | 66.5d |  |
| 17 | 1.2.1.2.1 | **Cubierta** | 6d | 2024-10-02 15:00 A | 2024-10-10 13:00 |  | 56% | 66.5d |  |
| 18 | 1.2.1.2.1.1 | **Canoas** | 5d | 2024-10-02 15:00 | 2024-10-09 13:00 |  |  | 67.5d |  |
| 19 |  | Suministro y colocación de canoa en U en lamina galvanizada calibre 24 moldurada, grafada y soldada en las uniones, desarrollo 0.70 m., incluye:embudos, boquillas, tapas, ganchos de fijación, pintura anticorrosiva verde y de acabado color a definir por in | 2d | 2024-10-07 15:00 | 2024-10-09 13:00 | 25 |  | 67.5d |  |
| 20 |  | Retiro de canoas | 1.5d | 2024-10-02 15:00 | 2024-10-03 19:00 | 12 |  | 70.5d |  |
| 21 | 1.2.1.2.1.2 | **Ruanas** | 6d | 2024-10-02 15:00 A | 2024-10-10 13:00 A |  | 100% |  |  |
| 22 |  | Retiro de ruanas | 1d | 2024-10-02 15:00 A | 2024-10-03 13:00 A | 20SS | 100% |  |  |
| 23 |  | Suministro y colocación de ruanas en lámina galvanizada calibre 24, incluye mortero, pintura anticorrosiva y a base de aceite, desarrollo 33 cm., pestaña de 5 cm. Canchada de muro, faja en revoque impermeabilizado con filete y todo lo necesario para su co | 1d | 2024-10-09 15:00 A | 2024-10-10 13:00 A | 19 | 100% |  |  |
| 24 | 1.2.1.2.1.3 | **Mantenimiento** | 3d | 2024-10-02 15:00 A | 2024-10-07 13:00 A |  | 100% |  |  |
| 25 |  | Reparación de techo en teja de barro. Incluye: retiro de manto existente si es necesario, retiro de teja existente, reistalación de la misma, suministro y colocación de teja (del 20%), tablilla (del 100 %) , impermeabilización con manto asfaltico imperpol | 3d | 2024-10-02 15:00 A | 2024-10-07 13:00 A | 22SS | 100% |  |  |
| 26 |  | Retiro de bajantes | 0.5d | 2024-10-04 09:00 | 2024-10-04 13:00 | 20 |  | 70.5d |  |
| 27 | 1.2.1.3 | **Circulación** | 7.5d | 2024-10-10 15:00 A | 2024-10-21 19:00 |  | 62% | 22.5d |  |
| 28 | 1.2.1.3.1 | **Cubierta** | 7.5d | 2024-10-10 15:00 A | 2024-10-21 19:00 |  | 62% | 22.5d |  |
| 29 | 1.2.1.3.1.1 | **Canoas** | 4.5d | 2024-10-10 15:00 A | 2024-10-16 19:00 |  | 50% | 22.5d |  |
| 30 |  | Retiro de canoas | 1d | 2024-10-10 15:00 A | 2024-10-11 13:00 A | 23 | 100% |  |  |
| 31 |  | Suministro y colocación de canoa en U en lamina galvanizada calibre 24 moldurada, grafada y soldada en las uniones, desarrollo 0.70 m., incluye:embudos, boquillas, tapas, ganchos de fijación, pintura anticorrosiva verde y de acabado color a definir por in | 1d | 2024-10-16 09:00 | 2024-10-16 19:00 | 36 |  | 22.5d |  |
| 32 | 1.2.1.3.1.2 | **Ruanas** | 7.5d | 2024-10-10 15:00 A | 2024-10-21 19:00 |  | 33% | 22.5d |  |
| 33 |  | Retiro de ruanas | 1.5d | 2024-10-10 15:00 A | 2024-10-11 19:00 A | 30SS | 100% |  |  |
| 34 |  | Suministro y colocación de ruanas en lámina galvanizada calibre 24, incluye mortero, pintura anticorrosiva y a base de aceite, desarrollo 33 cm., pestaña de 5 cm. Canchada de muro, faja en revoque impermeabilizado con filete y todo lo necesario para su co | 3d | 2024-10-17 09:00 | 2024-10-21 19:00 | 31 |  | 22.5d |  |
| 35 | 1.2.1.3.1.3 | **Mantenimientos** | 3.5d | 2024-10-10 15:00 A | 2024-10-15 19:00 A |  | 100% |  |  |
| 36 |  | Reparación de techo en teja de barro. Incluye: retiro de manto existente si es necesario, retiro de teja existente, reistalación de la misma, suministro y colocación de teja (del 20%), tablilla (del 100 %) , impermeabilización con manto asfaltico imperpol | 3.5d | 2024-10-10 15:00 A | 2024-10-15 19:00 A | 33SS | 100% |  |  |
| 37 |  | Retiro de bajantes | 0.5d | 2024-10-11 15:00 A | 2024-10-11 19:00 A | 30 | 100% |  |  |
| 38 | 1.3 | **Bloque 1** | 36.5d | 2024-10-22 09:00 | 2024-12-11 13:00 |  |  | 22.5d |  |
| 39 | 1.3.1 | **Piso 1** | 36.5d | 2024-10-22 09:00 | 2024-12-11 13:00 |  |  | 22.5d |  |
| 40 | 1.3.1.1 | **Aula 5** | 8d | 2024-10-22 09:00 | 2024-10-31 19:00 |  |  | 22.5d |  |
| 41 | 1.3.1.1.1 | **Cubierta** | 6d | 2024-10-22 09:00 | 2024-10-29 19:00 |  |  | 22.5d |  |
| 42 | 1.3.1.1.1.1 | **Canoas** | 5d | 2024-10-22 09:00 | 2024-10-28 19:00 |  |  | 22.5d |  |
| 43 |  | Retiro de canoas | 1d | 2024-10-22 09:00 | 2024-10-22 19:00 | 34 |  | 22.5d | start no earlier than 2024-09-12 09:00 |
| 44 |  | Suministro y colocación de canoa en U en lamina galvanizada calibre 24 moldurada, grafada y soldada en las uniones, desarrollo 0.70 m., incluye:embudos, boquillas, tapas, ganchos de fijación, pintura anticorrosiva verde y de acabado color a definir por in | 1d | 2024-10-28 09:00 | 2024-10-28 19:00 | 49 |  | 22.5d | start no earlier than 2024-09-12 09:00 |
| 45 | 1.3.1.1.1.2 | **Ruanas** | 6d | 2024-10-22 09:00 | 2024-10-29 19:00 |  |  | 22.5d |  |
| 46 |  | Retiro de ruanas | 1.5d | 2024-10-22 09:00 | 2024-10-23 13:00 | 43SS |  | 22.5d | start no earlier than 2024-09-12 09:00 |
| 47 |  | Suministro y colocación de ruanas en lámina galvanizada calibre 24, incluye mortero, pintura anticorrosiva y a base de aceite, desarrollo 33 cm., pestaña de 5 cm. Canchada de muro, faja en revoque impermeabilizado con filete y todo lo necesario para su co | 1d | 2024-10-29 09:00 | 2024-10-29 19:00 | 44 |  | 22.5d | start no earlier than 2024-09-12 09:00 |
| 48 | 1.3.1.1.1.3 | **Mantenimiento** | 4d | 2024-10-22 09:00 | 2024-10-25 19:00 |  |  | 22.5d |  |
| 49 |  | Reparación de techo en teja de barro. Incluye: retiro de manto existente si es necesario, retiro de teja existente, reistalación de la misma, suministro y colocación de teja (del 20%), tablilla (del 100 %) , impermeabilización con manto asfaltico imperpol | 4d | 2024-10-22 09:00 | 2024-10-25 19:00 | 46SS |  | 22.5d | start no earlier than 2024-09-12 09:00 |
| 50 | 1.3.1.1.2 | **Piso** | 2d | 2024-10-30 09:00 | 2024-10-31 19:00 |  |  | 51d |  |
| 51 |  | PULIDA Y BRILLADA DE PISO EN BALDOSA GRANO EXISTENTE. Incluye todo lo necesario para su correcta construcción y funcionamiento. | 2d | 2024-10-30 09:00 | 2024-10-31 19:00 | 47 |  | 51d | start no earlier than 2024-09-12 09:00 |
| 52 | 1.3.1.2 | **Aula 6** | 10d | 2024-10-30 09:00 | 2024-11-12 19:00 |  |  | 22.5d |  |
| 53 | 1.3.1.2.1 | **Cubierta** | 7d | 2024-10-30 09:00 | 2024-11-07 19:00 |  |  | 22.5d |  |
| 54 | 1.3.1.2.1.1 | **Canoa** | 6d | 2024-10-30 09:00 | 2024-11-06 19:00 |  |  | 22.5d |  |
| 55 |  | Retiro de canoas | 1d | 2024-10-30 09:00 | 2024-10-30 19:00 | 47 |  | 22.5d | start no earlier than 2024-09-12 09:00 |
| 56 |  | Suministro y colocación de canoa en U en lamina galvanizada calibre 24 moldurada, grafada y soldada en las uniones, desarrollo 0.70 m., incluye:embudos, boquillas, tapas, ganchos de fijación, pintura anticorrosiva verde y de acabado color a definir por in | 1d | 2024-11-06 09:00 | 2024-11-06 19:00 | 61FS+1d |  | 43d | start no earlier than 2024-09-12 09:00 |
| 57 | 1.3.1.2.1.2 | **Ruanas** | 7d | 2024-10-30 09:00 | 2024-11-07 19:00 |  |  | 22.5d |  |
| 58 |  | Retiro de ruanas | 1d | 2024-10-30 09:00 | 2024-10-30 19:00 | 55SS |  | 22.5d | start no earlier than 2024-09-12 09:00 |
| 59 |  | Suministro y colocación de ruanas en lámina galvanizada calibre 24, incluye mortero, pintura anticorrosiva y a base de aceite, desarrollo 33 cm., pestaña de 5 cm. Canchada de muro, faja en revoque impermeabilizado con filete y todo lo necesario para su co | 1d | 2024-11-07 09:00 | 2024-11-07 19:00 | 56 |  | 43d | start no earlier than 2024-09-12 09:00 |
| 60 | 1.3.1.2.1.3 | **Mantenimiento** | 4d | 2024-10-30 09:00 | 2024-11-04 19:00 |  |  | 22.5d |  |
| 61 |  | Reparación de techo en teja de barro. Incluye: retiro de manto existente si es necesario, retiro de teja existente, reistalación de la misma, suministro y colocación de teja (del 20%), tablilla (del 100 %) , impermeabilización con manto asfaltico imperpol | 4d | 2024-10-30 09:00 | 2024-11-04 19:00 | 58SS |  | 22.5d | start no earlier than 2024-09-12 09:00 |
| 62 | 1.3.1.2.2 | **Piso** | 3d | 2024-11-08 09:00 | 2024-11-12 19:00 |  |  | 43d |  |
| 63 |  | PULIDA Y BRILLADA DE PISO EN BALDOSA GRANO EXISTENTE. Incluye todo lo necesario para su correcta construcción y funcionamiento. | 3d | 2024-11-08 09:00 | 2024-11-12 19:00 | 59 |  | 43d | start no earlier than 2024-09-12 09:00 |
| 64 | 1.3.1.3 | **Aula Preescola** | 9d | 2024-11-06 09:00 | 2024-11-18 19:00 |  |  | 22.5d |  |
| 65 | 1.3.1.3.1 | **Cubierta** | 6d | 2024-11-06 09:00 | 2024-11-13 19:00 |  |  | 22.5d |  |
| 66 | 1.3.1.3.1.1 | **Canoa** | 5d | 2024-11-06 09:00 | 2024-11-12 19:00 |  |  | 22.5d |  |
| 67 |  | Retiro de canoas | 1d | 2024-11-06 09:00 | 2024-11-06 19:00 | 61FS+1d |  | 22.5d |  |
| 68 |  | Suministro y colocación de canoa en U en lamina galvanizada calibre 24 moldurada, grafada y soldada en las uniones, desarrollo 0.70 m., incluye:embudos, boquillas, tapas, ganchos de fijación, pintura anticorrosiva verde y de acabado color a definir por in | 1d | 2024-11-12 09:00 | 2024-11-12 19:00 | 73 |  | 22.5d |  |
| 69 | 1.3.1.3.1.2 | **Ruanas** | 6d | 2024-11-06 09:00 | 2024-11-13 19:00 |  |  | 22.5d |  |
| 70 |  | Retiro de ruanas | 1d | 2024-11-06 09:00 | 2024-11-06 19:00 | 67SS |  | 22.5d |  |

| ID | WBS | Task | Duration | Start | Finish | Predecessors | Complete | Total float |
| --- | --- | --- | --- | --- | --- | --- | --- | --- |
| 71 |  | Suministro y colocación de ruanas en lámina galvanizada calibre 24, incluye mortero, pintura anticorrosiva y a base de aceite, desarrollo 33 cm., pestaña de 5 cm. Canchada de muro, faja en revoque impermeabilizado con filete y todo lo necesario para su co | 1d | 2024-11-13 09:00 | 2024-11-13 19:00 | 68 |  | 22.5d |
| 72 | 1.3.1.3.1.3 | **Mantenimiento** | 4d | 2024-11-06 09:00 | 2024-11-11 19:00 |  |  | 22.5d |
| 73 |  | Reparación de techo en teja de barro. Incluye: retiro de manto existente si es necesario, retiro de teja existente, reistalación de la misma, suministro y colocación de teja (del 20%), tablilla (del 100 %) , impermeabilización con manto asfaltico imperpol | 4d | 2024-11-06 09:00 | 2024-11-11 19:00 | 70SS |  | 22.5d |
| 74 |  | Retiro de bajantes | 1d | 2024-11-07 09:00 | 2024-11-07 19:00 | 67 |  | 46d |
| 75 | 1.3.1.3.3 | **Piso** | 2d | 2024-11-15 09:00 | 2024-11-18 19:00 |  |  | 39d |
| 76 |  | PULIDA Y BRILLADA DE PISO EN BALDOSA GRANO EXISTENTE. Incluye todo lo necesario para su correcta construcción y funcionamiento. | 2d | 2024-11-15 09:00 | 2024-11-18 19:00 | 71FS+1d |  | 39d |
| 77 | 1.3.1.4 | **Baños Sociales** | 5d | 2024-11-14 09:00 | 2024-11-20 19:00 |  |  | 22.5d |
| 78 | 1.3.1.4.1 | **Cubierta** | 5d | 2024-11-14 09:00 | 2024-11-20 19:00 |  |  | 22.5d |
| 79 | 1.3.1.4.1.1 | **Ruanas** | 5d | 2024-11-14 09:00 | 2024-11-20 19:00 |  |  | 22.5d |
| 80 |  | Retiro de ruanas | 0.5d | 2024-11-14 09:00 | 2024-11-14 13:00 | 71 |  | 22.5d |
| 81 |  | Suministro y colocación de ruanas en lámina galvanizada calibre 24, incluye mortero, pintura anticorrosiva y a base de aceite, desarrollo 33 cm., pestaña de 5 cm. Canchada de muro, faja en revoque impermeabilizado con filete y todo lo necesario para su co | 1d | 2024-11-20 09:00 | 2024-11-20 19:00 | 83 |  | 37d |
| 82 | 1.3.1.4.1.2 | **Mantenimiento** | 4d | 2024-11-14 09:00 | 2024-11-19 19:00 |  |  | 22.5d |
| 83 |  | Reparación de techo en teja de barro. Incluye: retiro de manto existente si es necesario, retiro de teja existente, reistalación de la misma, suministro y colocación de teja (del 20%), tablilla (del 100 %) , impermeabilización con manto asfaltico imperpol | 4d | 2024-11-14 09:00 | 2024-11-19 19:00 | 80SS |  | 22.5d |
| 84 | 1.3.1.5 | **Tienda** | 5.5d | 2024-11-21 09:00 | 2024-11-28 13:00 |  |  | 22.5d |
| 85 | 1.3.1.5.1 | **Cubierta** | 5.5d | 2024-11-21 09:00 | 2024-11-28 13:00 |  |  | 22.5d |
| 86 | 1.3.1.5.1.1 | **Canoas** | 4.5d | 2024-11-21 09:00 | 2024-11-27 13:00 |  |  | 22.5d |
| 87 |  | Retiro de canoas | 0.5d | 2024-11-21 09:00 | 2024-11-21 13:00 | 83FS+1d |  | 22.5d |
| 88 |  | Suministro y colocación de canoa en U en lamina galvanizada calibre 24 moldurada, grafada y soldada en las uniones, desarrollo 0.70 m., incluye:embudos, boquillas, tapas, ganchos de fijación, pintura anticorrosiva verde y de acabado color a definir por in | 0.5d | 2024-11-27 09:00 | 2024-11-27 13:00 | 93 |  | 22.5d |
| 89 | 1.3.1.5.1.2 | **Ruanas** | 5.5d | 2024-11-21 09:00 | 2024-11-28 13:00 |  |  | 22.5d |
| 90 |  | Retiro de ruanas | 1d | 2024-11-21 09:00 | 2024-11-21 19:00 | 87SS |  | 22.5d |
| 91 |  | Suministro y colocación de ruanas en lámina galvanizada calibre 24, incluye mortero, pintura anticorrosiva y a base de aceite, desarrollo 33 cm., pestaña de 5 cm. Canchada de muro, faja en revoque impermeabilizado con filete y todo lo necesario para su co | 1d | 2024-11-27 15:00 | 2024-11-28 13:00 | 88 |  | 22.5d |
| 92 | 1.3.1.5.1.3 | **Mantenimiento** | 4d | 2024-11-21 09:00 | 2024-11-26 19:00 |  |  | 22.5d |
| 93 |  | Reparación de techo en teja de barro. Incluye: retiro de manto existente si es necesario, retiro de teja existente, reistalación de la misma, suministro y colocación de teja (del 20%), tablilla (del 100 %) , impermeabilización con manto asfaltico imperpol | 4d | 2024-11-21 09:00 | 2024-11-26 19:00 | 90SS |  | 22.5d |
| 94 |  | Retiro de bajantes | 0.5d | 2024-11-21 15:00 | 2024-11-21 19:00 | 87 |  | 36d |
| 95 | 1.3.1.6 | **Circulación** | 9d | 2024-11-28 15:00 | 2024-12-11 13:00 |  |  | 22.5d |
| 96 | 1.3.1.6.1 | **Cubierta** | 9d | 2024-11-28 15:00 | 2024-12-11 13:00 |  |  | 22.5d |
| 97 | 1.3.1.6.1.1 | **Canoas** | 6d | 2024-11-28 15:00 | 2024-12-06 13:00 |  |  | 22.5d |
| 98 |  | Retiro de canoas | 2d | 2024-11-28 15:00 | 2024-12-02 13:00 | 91 |  | 22.5d |
| 99 |  | Suministro y colocación de canoa en U en lamina galvanizada calibre 24 moldurada, grafada y soldada en las uniones, desarrollo 0.70 m., incluye:embudos, boquillas, tapas, ganchos de fijación, pintura anticorrosiva verde y de acabado color a definir por in | 2d | 2024-12-04 15:00 | 2024-12-06 13:00 | 104 |  | 22.5d |
| 100 | 1.3.1.6.1.2 | **Ruanas** | 9d | 2024-11-28 15:00 | 2024-12-11 13:00 |  |  | 22.5d |
| 101 |  | Retiro de ruanas | 4d | 2024-11-28 15:00 | 2024-12-04 13:00 | 98SS |  | 22.5d |
| 102 |  | Suministro y colocación de ruanas en lámina galvanizada calibre 24, incluye mortero, pintura anticorrosiva y a base de aceite, desarrollo 33 cm., pestaña de 5 cm. Canchada de muro, faja en revoque impermeabilizado con filete y todo lo necesario para su co | 3d | 2024-12-06 15:00 | 2024-12-11 13:00 | 99 |  | 22.5d |
| 103 | 1.3.1.6.1.3 | **Mantenimiento** | 4d | 2024-11-28 15:00 | 2024-12-04 13:00 |  |  | 22.5d |
| 104 |  | Reparación de techo en teja de barro. Incluye: retiro de manto existente si es necesario, retiro de teja existente, reistalación de la misma, suministro y colocación de teja (del 20%), tablilla (del 100 %) , impermeabilización con manto asfaltico imperpol | 4d | 2024-11-28 15:00 | 2024-12-04 13:00 | 101SS |  | 22.5d |
| 105 |  | Retiro de bajantes | 1.5d | 2024-12-02 15:00 | 2024-12-03 19:00 | 98 |  | 28d |
| 106 | 1.3.1.6.2 | **Sistema Eléctrico** | 2d | 2024-12-05 15:00 | 2024-12-09 13:00 |  |  | 24.5d |
| 107 |  | Retiro de luminaria existente. Incluye el reintegro donde indique la interventoria dentro de la ciudad de Medellin y los elementos necesarios para su desinstalación. No incluye reparacion, ni chequeo, ni reinstalación. | 2d | 2024-12-05 15:00 | 2024-12-09 13:00 | 104FS+1d |  | 24.5d |
| 108 | 1.4 | **Bloque 3** | 20.5d | 2024-09-24 09:00 A | 2024-10-22 13:00 A |  | 100% |  |
| 109 | 1.4.1 | **Piso 1** | 20.5d | 2024-09-24 09:00 A | 2024-10-22 13:00 A |  | 100% |  |
| 110 | 1.4.1.1 | **Coordinación** | 4d | 2024-09-24 09:00 A | 2024-09-27 19:00 A |  | 100% |  |
| 111 | 1.4.1.1.1 | **Cubierta** | 4d | 2024-09-24 09:00 A | 2024-09-27 19:00 A |  | 100% |  |
| 112 | 1.4.1.1.1.1 | **Canoas** | 2.5d | 2024-09-24 09:00 A | 2024-09-26 13:00 A |  | 100% |  |
| 113 |  | Retiro de canoas | 0.5d | 2024-09-24 09:00 A | 2024-09-24 13:00 A | 8SS | 100% |  |
| 114 |  | Suministro y colocación de canoa en U en lamina galvanizada calibre 24 moldurada, grafada y soldada en las uniones, desarrollo 0.70 m., incluye:embudos, boquillas, tapas, ganchos de fijación, pintura anticorrosiva verde y de acabado color a definir por in | 1d | 2024-09-25 15:00 A | 2024-09-26 13:00 A | 119 | 100% |  |
| 115 | 1.4.1.1.1.2 | **Ruanas** | 4d | 2024-09-24 09:00 A | 2024-09-27 19:00 A |  | 100% |  |
| 116 |  | Retiro de ruanas | 1d | 2024-09-24 09:00 A | 2024-09-24 19:00 A | 113SS | 100% |  |
| 117 |  | Suministro y colocación de ruanas en lámina galvanizada calibre 24, incluye mortero, pintura anticorrosiva y a base de aceite, desarrollo 33 cm., pestaña de 5 cm. Canchada de muro, faja en revoque impermeabilizado con filete y todo lo necesario para su co | 1.5d | 2024-09-26 15:00 A | 2024-09-27 19:00 A | 114 | 100% |  |
| 118 | 1.4.1.1.1.3 | **Mantenimiento** | 1.5d | 2024-09-24 09:00 A | 2024-09-25 13:00 A |  | 100% |  |
| 119 |  | Reparación de techo en teja de barro. Incluye: retiro de manto existente si es necesario, retiro de teja existente, reistalación de la misma, suministro y colocación de teja (del 20%), tablilla (del 100 %) , impermeabilización con manto asfaltico imperpol | 1.5d | 2024-09-24 09:00 A | 2024-09-25 13:00 A | 116SS | 100% |  |
| 120 |  | Retiro de bajantes | 0.5d | 2024-09-24 15:00 A | 2024-09-24 19:00 A | 113 | 100% |  |
| 121 | 1.4.1.2 | **Sala de Profesores** | 4d | 2024-09-25 15:00 A | 2024-10-01 13:00 A |  | 100% |  |
| 122 | 1.4.1.2.1 | **Cubierta** | 4d | 2024-09-25 15:00 A | 2024-10-01 13:00 A |  | 100% |  |
| 123 | 1.4.1.2.1.1 | **Canoas** | 2.5d | 2024-09-25 15:00 A | 2024-09-27 19:00 A |  | 100% |  |
| 124 |  | Retiro de canoas | 0.5d | 2024-09-25 15:00 A | 2024-09-25 19:00 A | 119 | 100% |  |
| 125 |  | Suministro y colocación de canoa en U en lamina galvanizada calibre 24 moldurada, grafada y soldada en las uniones, desarrollo 0.70 m., incluye:embudos, boquillas, tapas, ganchos de fijación, pintura anticorrosiva verde y de acabado color a definir por in | 1d | 2024-09-27 09:00 A | 2024-09-27 19:00 A | 130 | 100% |  |
| 126 | 1.4.1.2.1.2 | **Ruanas** | 4d | 2024-09-25 15:00 A | 2024-10-01 13:00 A |  | 100% |  |
| 127 |  | Retiro de ruanas | 1d | 2024-09-25 15:00 A | 2024-09-26 13:00 A | 124SS | 100% |  |
| 128 |  | Suministro y colocación de ruanas en lámina galvanizada calibre 24, incluye mortero, pintura anticorrosiva y a base de aceite, desarrollo 33 cm., pestaña de 5 cm. Canchada de muro, faja en revoque impermeabilizado con filete y todo lo necesario para su co | 1.5d | 2024-09-30 09:00 A | 2024-10-01 13:00 A | 125 | 100% |  |
| 129 | 1.4.1.2.1.3 | **Mantenimiento** | 1.5d | 2024-09-25 15:00 A | 2024-09-26 19:00 A |  | 100% |  |
| 130 |  | Reparación de techo en teja de barro. Incluye: retiro de manto existente si es necesario, retiro de teja existente, reistalación de la misma, suministro y colocación de teja (del 20%), tablilla (del 100 %) , impermeabilización con manto asfaltico imperpol | 1.5d | 2024-09-25 15:00 A | 2024-09-26 19:00 A | 127SS | 100% |  |
| 131 |  | Retiro de bajantes | 0.5d | 2024-09-26 09:00 A | 2024-09-26 13:00 A | 124 | 100% |  |
| 132 | 1.4.1.3 | **Baños Niñas** | 4d | 2024-10-01 15:00 A | 2024-10-07 13:00 A |  | 100% |  |
| 133 | 1.4.1.3.1 | **Cubierta** | 4d | 2024-10-01 15:00 A | 2024-10-07 13:00 A |  | 100% |  |
| 134 | 1.4.1.3.1.1 | **Canoas** | 2.5d | 2024-10-01 15:00 A | 2024-10-03 19:00 A |  | 100% |  |
| 135 |  | Retiro de canoas | 0.5d | 2024-10-01 15:00 A | 2024-10-01 19:00 A | 128 | 100% |  |
| 136 |  | Suministro y colocación de canoa en U en lamina galvanizada calibre 24 moldurada, grafada y soldada en las uniones, desarrollo 0.70 m., incluye:embudos, boquillas, tapas, ganchos de fijación, pintura anticorrosiva verde y de acabado color a definir por in | 1d | 2024-10-03 09:00 A | 2024-10-03 19:00 A | 141 | 100% |  |
| 137 | 1.4.1.3.1.2 | **Ruanas** | 4d | 2024-10-01 15:00 A | 2024-10-07 13:00 A |  | 100% |  |
| 138 |  | Retiro de ruanas | 1d | 2024-10-01 15:00 A | 2024-10-02 13:00 A | 135SS | 100% |  |
| 139 |  | Suministro y colocación de ruanas en lámina galvanizada calibre 24, incluye mortero, pintura anticorrosiva y a base de aceite, desarrollo 33 cm., pestaña de 5 cm. Canchada de muro, faja en revoque impermeabilizado con filete y todo lo necesario para su co | 1.5d | 2024-10-04 09:00 A | 2024-10-07 13:00 A | 136 | 100% |  |
| 140 | 1.4.1.3.1.3 | **Mantenimiento** | 1.5d | 2024-10-01 15:00 A | 2024-10-02 19:00 A |  | 100% |  |

| ID | WBS | Task | Duration | Start | Finish | Predecessors | Complete | Total float | Constraint |
| --- | --- | --- | --- | --- | --- | --- | --- | --- | --- |
| 141 |  | Reparación de techo en teja de barro. Incluye: retiro de manto existente si es necesario, retiro de teja existente, reistalación de la misma, suministro y colocación de teja (del 20%), tablilla (del 100 %) , impermeabilización con manto asfaltico imperpol | 1.5d | 2024-10-01 15:00 A | 2024-10-02 19:00 A | 138SS | 100% |  |  |
| 142 |  | Retiro de bajantes | 0.5d | 2024-10-02 09:00 A | 2024-10-02 13:00 A | 135 | 100% |  |  |
| 143 | 1.4.1.4 | **Baños Niños** | 4.5d | 2024-10-07 15:00 A | 2024-10-11 19:00 A |  | 100% |  |  |
| 144 | 1.4.1.4.1 | **Cubierta** | 4.5d | 2024-10-07 15:00 A | 2024-10-11 19:00 A |  | 100% |  |  |
| 145 | 1.4.1.4.1.1 | **Canoa** | 2.5d | 2024-10-07 15:00 A | 2024-10-09 19:00 A |  | 100% |  |  |
| 146 |  | Retiro de canoas | 0.5d | 2024-10-07 15:00 A | 2024-10-07 19:00 A | 139 | 100% |  |  |
| 147 |  | Suministro y colocación de canoa en U en lamina galvanizada calibre 24 moldurada, grafada y soldada en las uniones, desarrollo 0.70 m., incluye:embudos, boquillas, tapas, ganchos de fijación, pintura anticorrosiva verde y de acabado color a definir por in | 1d | 2024-10-09 09:00 A | 2024-10-09 19:00 A | 152 | 100% |  |  |
| 148 | 1.4.1.4.1.2 | **Ruanas** | 4.5d | 2024-10-07 15:00 A | 2024-10-11 19:00 A |  | 100% |  |  |
| 149 |  | Retiro de ruanas | 1.5d | 2024-10-07 15:00 A | 2024-10-08 19:00 A | 146SS | 100% |  |  |
| 150 |  | Suministro y colocación de ruanas en lámina galvanizada calibre 24, incluye mortero, pintura anticorrosiva y a base de aceite, desarrollo 33 cm., pestaña de 5 cm. Canchada de muro, faja en revoque impermeabilizado con filete y todo lo necesario para su co | 2d | 2024-10-10 09:00 A | 2024-10-11 19:00 A | 147 | 100% |  |  |
| 151 | 1.4.1.4.1.3 | **Mantenimiento** | 1.5d | 2024-10-07 15:00 A | 2024-10-08 19:00 A |  | 100% |  |  |
| 152 |  | Reparación de techo en teja de barro. Incluye: retiro de manto existente si es necesario, retiro de teja existente, reistalación de la misma, suministro y colocación de teja (del 20%), tablilla (del 100 %) , impermeabilización con manto asfaltico imperpol | 1.5d | 2024-10-07 15:00 A | 2024-10-08 19:00 A | 149SS | 100% |  |  |
| 153 |  | Retiro de bajantes | 0.5d | 2024-10-08 09:00 A | 2024-10-08 13:00 A | 146 | 100% |  |  |
| 154 | 1.4.1.5 | **Circulación** | 6.5d | 2024-10-14 09:00 A | 2024-10-22 13:00 A |  | 100% |  |  |
| 155 | 1.4.1.5.1 | **Cubierta** | 6.5d | 2024-10-14 09:00 A | 2024-10-22 13:00 A |  | 100% |  |  |
| 156 | 1.4.1.5.1.1 | **Canoas** | 4.5d | 2024-10-14 09:00 A | 2024-10-18 13:00 A |  | 100% |  |  |
| 157 |  | Retiro de canoas | 0.5d | 2024-10-14 09:00 A | 2024-10-14 13:00 A | 150 | 100% |  |  |
| 158 |  | Suministro y colocación de canoa en U en lamina galvanizada calibre 24 moldurada, grafada y soldada en las uniones, desarrollo 0.70 m., incluye:embudos, boquillas, tapas, ganchos de fijación, pintura anticorrosiva verde y de acabado color a definir por in | 1d | 2024-10-17 15:00 A | 2024-10-18 13:00 A | 163 | 100% |  |  |
| 159 | 1.4.1.5.1.2 | **Ruanas** | 6.5d | 2024-10-14 09:00 A | 2024-10-22 13:00 A |  | 100% |  |  |
| 160 |  | Retiro de ruanas | 2d | 2024-10-14 09:00 A | 2024-10-15 19:00 A | 157SS | 100% |  |  |
| 161 |  | Suministro y colocación de ruanas en lámina galvanizada calibre 24, incluye mortero, pintura anticorrosiva y a base de aceite, desarrollo 33 cm., pestaña de 5 cm. Canchada de muro, faja en revoque impermeabilizado con filete y todo lo necesario para su co | 2d | 2024-10-18 15:00 A | 2024-10-22 13:00 A | 158 | 100% |  |  |
| 162 | 1.4.1.5.1.3 | **Mantenimiento** | 3.5d | 2024-10-14 09:00 A | 2024-10-17 13:00 A |  | 100% |  |  |
| 163 |  | Reparación de techo en teja de barro. Incluye: retiro de manto existente si es necesario, retiro de teja existente, reistalación de la misma, suministro y colocación de teja (del 20%), tablilla (del 100 %) , impermeabilización con manto asfaltico imperpol | 3.5d | 2024-10-14 09:00 A | 2024-10-17 13:00 A | 160SS | 100% |  |  |
| 164 |  | Retiro de bajantes | 0.5d | 2024-10-14 15:00 A | 2024-10-14 19:00 A | 157 | 100% |  |  |
| 165 | 1.5 | **Bloque 4** | 19.5d | 2024-10-22 15:00 | 2024-11-18 19:00 |  |  | 39d |  |
| 166 | 1.5.1 | **Piso 1** | 19.5d | 2024-10-22 15:00 | 2024-11-18 19:00 |  |  | 39d |  |
| 167 | 1.5.1.1 | **Aula 1** | 6.5d | 2024-10-22 15:00 | 2024-10-30 19:00 |  |  | 39d |  |
| 168 | 1.5.1.1.1 | **Cubierta** | 6.5d | 2024-10-22 15:00 | 2024-10-30 19:00 |  |  | 39d |  |
| 169 | 1.5.1.1.1.1 | **Canoas** | 5d | 2024-10-22 15:00 | 2024-10-29 13:00 |  |  | 39d |  |
| 170 |  | Retiro de canoas | 1d | 2024-10-22 15:00 | 2024-10-23 13:00 | 161 |  | 39d |  |
| 171 |  | Suministro y colocación de canoa en U en lamina galvanizada calibre 24 moldurada, grafada y soldada en las uniones, desarrollo 0.70 m., incluye:embudos, boquillas, tapas, ganchos de fijación, pintura anticorrosiva verde y de acabado color a definir por in | 1.5d | 2024-10-28 09:00 | 2024-10-29 13:00 | 176 |  | 39d |  |
| 172 | 1.5.1.1.1.2 | **Ruanas** | 6.5d | 2024-10-22 15:00 | 2024-10-30 19:00 |  |  | 39d |  |
| 173 |  | Retiro de ruanas | 1.5d | 2024-10-22 15:00 | 2024-10-23 19:00 | 170SS |  | 39d |  |
| 174 |  | Suministro y colocación de ruanas en lámina galvanizada calibre 24, incluye mortero, pintura anticorrosiva y a base de aceite, desarrollo 33 cm., pestaña de 5 cm. Canchada de muro, faja en revoque impermeabilizado con filete y todo lo necesario para su co | 1.5d | 2024-10-29 15:00 | 2024-10-30 19:00 | 171 |  | 39d | start no earlier than 2024-09-12 09:00 |
| 175 | 1.5.1.1.1.3 | **Mantenimiento** | 3.5d | 2024-10-22 15:00 | 2024-10-25 19:00 |  |  | 39d |  |
| 176 |  | Reparación de techo en teja de barro. Incluye: retiro de manto existente si es necesario, retiro de teja existente, reistalación de la misma, suministro y colocación de teja (del 20%), tablilla (del 100 %) , impermeabilización con manto asfaltico imperpol | 3.5d | 2024-10-22 15:00 | 2024-10-25 19:00 | 173SS |  | 39d |  |
| 177 |  | Retiro de bajantes | 0.5d | 2024-10-23 15:00 | 2024-10-23 19:00 | 170 |  | 57d |  |
| 178 | 1.5.1.2 | **Aula 2** | 6.5d | 2024-10-31 09:00 | 2024-11-08 13:00 |  |  | 39d |  |
| 179 | 1.5.1.2.1 | **Cubierta** | 6.5d | 2024-10-31 09:00 | 2024-11-08 13:00 |  |  | 39d |  |
| 180 | 1.5.1.2.1.1 | **Canoas** | 5d | 2024-10-31 09:00 | 2024-11-06 19:00 |  |  | 39d |  |
| 181 |  | Retiro de canoas | 1d | 2024-10-31 09:00 | 2024-10-31 19:00 | 174 |  | 39d |  |
| 182 |  | Suministro y colocación de canoa en U en lamina galvanizada calibre 24 moldurada, grafada y soldada en las uniones, desarrollo 0.70 m., incluye:embudos, boquillas, tapas, ganchos de fijación, pintura anticorrosiva verde y de acabado color a definir por in | 1.5d | 2024-11-05 15:00 | 2024-11-06 19:00 | 187 |  | 39d |  |
| 183 | 1.5.1.2.1.2 | **Ruanas** | 6.5d | 2024-10-31 09:00 | 2024-11-08 13:00 |  |  | 39d |  |
| 184 |  | Retiro de ruanas | 1.5d | 2024-10-31 09:00 | 2024-11-01 13:00 | 181SS |  | 39d |  |
| 185 |  | Suministro y colocación de ruanas en lámina galvanizada calibre 24, incluye mortero, pintura anticorrosiva y a base de aceite, desarrollo 33 cm., pestaña de 5 cm. Canchada de muro, faja en revoque impermeabilizado con filete y todo lo necesario para su co | 1.5d | 2024-11-07 09:00 | 2024-11-08 13:00 | 182 |  | 39d |  |
| 186 | 1.5.1.2.1.3 | **Mantenimiento** | 3.5d | 2024-10-31 09:00 | 2024-11-05 13:00 |  |  | 39d |  |
| 187 |  | Reparación de techo en teja de barro. Incluye: retiro de manto existente si es necesario, retiro de teja existente, reistalación de la misma, suministro y colocación de teja (del 20%), tablilla (del 100 %) , impermeabilización con manto asfaltico imperpol | 3.5d | 2024-10-31 09:00 | 2024-11-05 13:00 | 184SS |  | 39d |  |
| 188 |  | Retiro de bajantes | 0.5d | 2024-11-01 09:00 | 2024-11-01 13:00 | 181 |  | 50.5d |  |
| 189 | 1.5.1.3 | **Circulación** | 6.5d | 2024-11-08 15:00 | 2024-11-18 19:00 |  |  | 39d |  |
| 190 | 1.5.1.3.1 | **Cubierta** | 6.5d | 2024-11-08 15:00 | 2024-11-18 19:00 |  |  | 39d |  |
| 191 | 1.5.1.3.1.1 | **Canoas** | 5d | 2024-11-08 15:00 | 2024-11-15 13:00 |  |  | 39d |  |
| 192 |  | Retiro de canoas | 1d | 2024-11-08 15:00 | 2024-11-11 13:00 | 185 |  | 39d |  |
| 193 |  | Suministro y colocación de canoa en U en lamina galvanizada calibre 24 moldurada, grafada y soldada en las uniones, desarrollo 0.70 m., incluye:embudos, boquillas, tapas, ganchos de fijación, pintura anticorrosiva verde y de acabado color a definir por in | 1.5d | 2024-11-14 09:00 | 2024-11-15 13:00 | 198 |  | 39d |  |
| 194 | 1.5.1.3.1.2 | **Ruanas** | 6.5d | 2024-11-08 15:00 | 2024-11-18 19:00 |  |  | 39d |  |
| 195 |  | Retiro de ruanas | 1.5d | 2024-11-08 15:00 | 2024-11-11 19:00 | 192SS |  | 39d |  |
| 196 |  | Suministro y colocación de ruanas en lámina galvanizada calibre 24, incluye mortero, pintura anticorrosiva y a base de aceite, desarrollo 33 cm., pestaña de 5 cm. Canchada de muro, faja en revoque impermeabilizado con filete y todo lo necesario para su co | 1.5d | 2024-11-15 15:00 | 2024-11-18 19:00 | 193 |  | 39d |  |
| 197 | 1.5.1.3.1.3 | **Mantenimiento** | 3.5d | 2024-11-08 15:00 | 2024-11-13 19:00 |  |  | 39d |  |
| 198 |  | Reparación de techo en teja de barro. Incluye: retiro de manto existente si es necesario, retiro de teja existente, reistalación de la misma, suministro y colocación de teja (del 20%), tablilla (del 100 %) , impermeabilización con manto asfaltico imperpol | 3.5d | 2024-11-08 15:00 | 2024-11-13 19:00 | 195SS |  | 39d |  |
| 199 |  | Retiro de bajantes | 0.5d | 2024-11-11 15:00 | 2024-11-11 19:00 | 192 |  | 44d |  |
| 200 | 1.6 | **Bloque 5** | 30.5d | 2024-10-10 09:00 | 2024-11-21 13:00 |  |  | 36.5d |  |
| 201 | 1.6.1 | **Piso 1** | 30.5d | 2024-10-10 09:00 | 2024-11-21 13:00 |  |  | 36.5d |  |
| 202 | 1.6.1.1 | **Cocina** | 9d | 2024-10-10 09:00 | 2024-10-22 19:00 |  |  | 36.5d |  |
| 203 | 1.6.1.1.1 | **Cubierta** | 5d | 2024-10-10 09:00 | 2024-10-16 19:00 |  |  | 36.5d |  |
| 204 | 1.6.1.1.1.1 | **Canoas** | 4d | 2024-10-10 09:00 | 2024-10-15 19:00 |  |  | 36.5d |  |
| 205 |  | Retiro de canoas | 0.5d | 2024-10-10 09:00 | 2024-10-10 13:00 | 34FS-8d |  | 36.5d |  |
| 206 |  | Suministro y colocación de canoa en U en lamina galvanizada calibre 24 moldurada, grafada y soldada en las uniones, desarrollo 0.70 m., incluye:embudos, boquillas, tapas, ganchos de fijación, pintura anticorrosiva verde y de acabado color a definir por in | 0.5d | 2024-10-15 15:00 | 2024-10-15 19:00 | 211 |  | 36.5d |  |
| 207 | 1.6.1.1.1.2 | **Ruanas** | 5d | 2024-10-10 09:00 | 2024-10-16 19:00 |  |  | 36.5d |  |
| 208 |  | Retiro de ruanas | 1d | 2024-10-10 09:00 | 2024-10-10 19:00 | 205SS |  | 36.5d |  |
| 209 |  | Suministro y colocación de ruanas en lámina galvanizada calibre 24, incluye mortero, pintura anticorrosiva y a base de aceite, desarrollo 33 cm., pestaña de 5 cm. Canchada de muro, faja en revoque impermeabilizado con filete y todo lo necesario para su co | 1d | 2024-10-16 09:00 | 2024-10-16 19:00 | 206 |  | 36.5d |  |
| 210 | 1.6.1.1.1.3 | **Mantenimiento** | 3.5d | 2024-10-10 09:00 | 2024-10-15 13:00 |  |  | 36.5d |  |

| ID | WBS | Task | Duration | Start | Finish | Predecessors | Total float | Constraint |
| --- | --- | --- | --- | --- | --- | --- | --- | --- |
| 211 |  | Reparación de techo en teja de barro. Incluye: retiro de manto existente si es necesario, retiro de teja existente, reistalación de la misma, suministro y colocación de teja (del 20%), tablilla (del 100 %) , impermeabilización con manto asfaltico imperpol | 3.5d | 2024-10-10 09:00 | 2024-10-15 13:00 | 208SS | 36.5d |  |
| 212 | 1.6.1.1.2 | **Muros** | 5d | 2024-10-15 15:00 | 2024-10-22 13:00 |  | 58d |  |
| 213 | 1.6.1.1.2.1 | **Pintura** | 5d | 2024-10-15 15:00 | 2024-10-22 13:00 |  | 58d |  |
| 214 |  | Retiro de pintura base aceite con removedor, grata metalica hasta encontrar superficie original. Para cocina | 2d | 2024-10-15 15:00 | 2024-10-17 13:00 | 211 | 58d |  |
| 215 |  | Pintura a base de agua, vinilo de primera calidad sobre pintura existente, tres manos, incluye resanes, con estuco plastico tipo plastestuco o similar diluido en agua proporciòn 1:2, adecuación de la superficie a intervenir, (rasquetiada). En muro | 2d | 2024-10-17 15:00 | 2024-10-21 13:00 | 214 | 58d |  |
| 216 |  | Suministro y aplicación de PINTURA EPOXICA EN MUROS Y CIELOS (dos componentes proporción 1:3, no tóxica) tipo epoxiconstrucción de pintuco o equivalente, de primera calidad, semimate, sobre estuco plástico, 2 a 3 manos o las necesarias para lograr una sue | 1d | 2024-10-21 15:00 | 2024-10-22 13:00 | 215 | 58d |  |
| 217 | 1.6.1.1.3 | **Sistema Eléctrico** | 0.5d | 2024-10-22 15:00 | 2024-10-22 19:00 |  | 58d |  |
| 218 |  | Suministro, transporte e instalación de luminaria industrial tipo hermética, con tubo LED difusor en policarbonato, 2x18W T8. Chasis en policarbonato resistente al impacto, 6500°K, 3600lm, IRC=70, 40.000 Horas - L70, IP=65, IK=06, 36W, 100-240V 50/60Hz. I | 0.5d | 2024-10-22 15:00 | 2024-10-22 19:00 | 216 | 58d |  |
| 219 | 1.6.1.2 | **Cuarto de Alimento** | 6d | 2024-10-17 09:00 | 2024-10-24 19:00 |  | 36.5d |  |
| 220 | 1.6.1.2.1 | **Cubierta** | 6d | 2024-10-17 09:00 | 2024-10-24 19:00 |  | 36.5d |  |
| 221 | 1.6.1.2.1.1 | **Canoas** | 4.5d | 2024-10-17 09:00 | 2024-10-23 13:00 |  | 36.5d |  |
| 222 |  | Retiro de canoas | 0.5d | 2024-10-17 09:00 | 2024-10-17 13:00 | 209 | 36.5d | start no earlier than 2024-09-12 09:00 |
| 223 |  | Suministro y colocación de canoa en U en lamina galvanizada calibre 24 moldurada, grafada y soldada en las uniones, desarrollo 0.70 m., incluye:embudos, boquillas, tapas, ganchos de fijación, pintura anticorrosiva verde y de acabado color a definir por in | 1d | 2024-10-22 15:00 | 2024-10-23 13:00 | 228 | 36.5d |  |
| 224 | 1.6.1.2.1.2 | **Ruanas** | 6d | 2024-10-17 09:00 | 2024-10-24 19:00 |  | 36.5d |  |
| 225 |  | Retiro de ruanas | 1d | 2024-10-17 09:00 | 2024-10-17 19:00 | 222SS | 36.5d | start no earlier than 2024-09-12 09:00 |
| 226 |  | Suministro y colocación de ruanas en lámina galvanizada calibre 24, incluye mortero, pintura anticorrosiva y a base de aceite, desarrollo 33 cm., pestaña de 5 cm. Canchada de muro, faja en revoque impermeabilizado con filete y todo lo necesario para su co | 1.5d | 2024-10-23 15:00 | 2024-10-24 19:00 | 223 | 36.5d |  |
| 227 | 1.6.1.2.1.3 | **Mantenimiento** | 3.5d | 2024-10-17 09:00 | 2024-10-22 13:00 |  | 36.5d |  |
| 228 |  | Reparación de techo en teja de barro. Incluye: retiro de manto existente si es necesario, retiro de teja existente, reistalación de la misma, suministro y colocación de teja (del 20%), tablilla (del 100 %) , impermeabilización con manto asfaltico imperpol | 3.5d | 2024-10-17 09:00 | 2024-10-22 13:00 | 225SS | 36.5d |  |
| 229 | 1.6.1.2.2 | **Muros** | 2d | 2024-10-22 15:00 | 2024-10-24 13:00 |  | 56.5d |  |
| 230 | 1.6.1.2.2.1 | **Pintura** | 2d | 2024-10-22 15:00 | 2024-10-24 13:00 |  | 56.5d |  |
| 231 |  | Retiro de pintura base aceite con removedor, grata metalica hasta encontrar superficie original. Para cocina | 0.5d | 2024-10-22 15:00 | 2024-10-22 19:00 | 228 | 56.5d | start no earlier than 2024-09-12 09:00 |
| 232 |  | Pintura a base de agua, vinilo de primera calidad sobre pintura existente, tres manos, incluye resanes, con estuco plastico tipo plastestuco o similar diluido en agua proporciòn 1:2, adecuación de la superficie a intervenir, (rasquetiada). En muro | 1d | 2024-10-23 09:00 | 2024-10-23 19:00 | 231 | 56.5d |  |
| 233 |  | Suministro y aplicación de PINTURA EPOXICA EN MUROS Y CIELOS (dos componentes proporción 1:3, no tóxica) tipo epoxiconstrucción de pintuco o equivalente, de primera calidad, semimate, sobre estuco plástico, 2 a 3 manos o las necesarias para lograr una sue | 0.5d | 2024-10-24 09:00 | 2024-10-24 13:00 | 232 | 56.5d |  |
| 234 | 1.6.1.3 | **Baño de Cambio** | 3.5d | 2024-10-25 09:00 | 2024-10-30 13:00 |  | 36.5d |  |
| 235 | 1.6.1.3.1 | **Cubierta** | 3.5d | 2024-10-25 09:00 | 2024-10-30 13:00 |  | 36.5d |  |
| 236 | 1.6.1.3.1.1 | **Canoas** | 3.5d | 2024-10-25 09:00 | 2024-10-30 13:00 |  | 36.5d |  |
| 237 |  | Retiro de canoas | 0.5d | 2024-10-25 09:00 | 2024-10-25 13:00 | 226 | 36.5d | start no earlier than 2024-09-12 09:00 |
| 238 |  | Suministro y colocación de canoa en U en lamina galvanizada calibre 24 moldurada, grafada y soldada en las uniones, desarrollo 0.70 m., incluye:embudos, boquillas, tapas, ganchos de fijación, pintura anticorrosiva verde y de acabado color a definir por in | 0.5d | 2024-10-30 09:00 | 2024-10-30 13:00 | 243 | 36.5d |  |
| 239 | 1.6.1.3.1.2 | **Ruanas** | 3.5d | 2024-10-25 09:00 | 2024-10-30 13:00 |  | 36.5d |  |
| 240 |  | Retiro de ruanas | 1d | 2024-10-25 09:00 | 2024-10-25 19:00 | 237SS | 36.5d |  |
| 241 |  | Suministro y colocación de ruanas en lámina galvanizada calibre 24, incluye mortero, pintura anticorrosiva y a base de aceite, desarrollo 33 cm., pestaña de 5 cm. Canchada de muro, faja en revoque impermeabilizado con filete y todo lo necesario para su co | 1d | 2024-10-29 15:00 | 2024-10-30 13:00 | 238FS-1d | 36.5d |  |
| 242 | 1.6.1.3.1.3 | **Mantenimiento** | 3d | 2024-10-25 09:00 | 2024-10-29 19:00 |  | 36.5d |  |
| 243 |  | Reparación de techo en teja de barro. Incluye: retiro de manto existente si es necesario, retiro de teja existente, reistalación de la misma, suministro y colocación de teja (del 20%), tablilla (del 100 %) , impermeabilización con manto asfaltico imperpol | 3d | 2024-10-25 09:00 | 2024-10-29 19:00 | 240SS | 36.5d |  |
| 244 |  | Retiro de bajantes | 0.5d | 2024-10-25 15:00 | 2024-10-25 19:00 | 237 | 55d |  |
| 245 | 1.6.1.4 | **Comedor** | 9d | 2024-10-30 15:00 | 2024-11-12 13:00 |  | 36.5d |  |
| 246 | 1.6.1.4.1 | **Cubierta** | 7.5d | 2024-10-30 15:00 | 2024-11-08 19:00 |  | 36.5d |  |
| 247 | 1.6.1.4.1.1 | **Canoas** | 5.5d | 2024-10-30 15:00 | 2024-11-06 19:00 |  | 36.5d |  |
| 248 |  | Retiro de canoas | 1d | 2024-10-30 15:00 | 2024-10-31 13:00 | 241 | 36.5d | start no earlier than 2024-09-12 09:00 |
| 249 |  | Suministro y colocación de canoa en U en lamina galvanizada calibre 24 moldurada, grafada y soldada en las uniones, desarrollo 0.70 m., incluye:embudos, boquillas, tapas, ganchos de fijación, pintura anticorrosiva verde y de acabado color a definir por in | 1d | 2024-11-06 09:00 | 2024-11-06 19:00 | 254 | 36.5d |  |
| 250 | 1.6.1.4.1.2 | **Ruanas** | 7.5d | 2024-10-30 15:00 | 2024-11-08 19:00 |  | 36.5d |  |
| 251 |  | Retiro de ruanas | 1.5d | 2024-10-30 15:00 | 2024-10-31 19:00 | 248SS | 36.5d |  |
| 252 |  | Suministro y colocación de ruanas en lámina galvanizada calibre 24, incluye mortero, pintura anticorrosiva y a base de aceite, desarrollo 33 cm., pestaña de 5 cm. Canchada de muro, faja en revoque impermeabilizado con filete y todo lo necesario para su co | 2d | 2024-11-07 09:00 | 2024-11-08 19:00 | 249 | 43.5d |  |
| 253 | 1.6.1.4.1.3 | **Mantenimiento** | 4.5d | 2024-10-30 15:00 | 2024-11-05 19:00 |  | 36.5d |  |
| 254 |  | Reparación de techo en teja de barro. Incluye: retiro de manto existente si es necesario, retiro de teja existente, reistalación de la misma, suministro y colocación de teja (del 20%), tablilla (del 100 %) , impermeabilización con manto asfaltico imperpol | 4.5d | 2024-10-30 15:00 | 2024-11-05 19:00 | 251SS | 36.5d |  |
| 255 | 1.6.1.4.2 | **Muros** | 1.5d | 2024-11-11 09:00 | 2024-11-12 13:00 |  | 43.5d |  |
| 256 | 1.6.1.4.2.1 | **Pintura** | 1.5d | 2024-11-11 09:00 | 2024-11-12 13:00 |  | 43.5d |  |
| 257 |  | Suministro y aplicación de PINTURA EPOXICA EN MUROS Y CIELOS (dos componentes proporción 1:3, no tóxica) tipo epoxiconstrucción de pintuco o equivalente, de primera calidad, semimate, sobre estuco plástico, 2 a 3 manos o las necesarias para lograr una sue | 1.5d | 2024-11-11 09:00 | 2024-11-12 13:00 | 252 | 43.5d |  |
| 258 | 1.6.1.4.2.2 | **Sistema Eléctrico** | 0.5d | 2024-11-11 15:00 | 2024-11-11 19:00 |  | 44d |  |
| 259 |  | Suministro, transporte e instalación de luminaria industrial tipo hermética, con tubo LED difusor en policarbonato, 2x18W T8. Chasis en policarbonato resistente al impacto, 6500°K, 3600lm, IRC=70, 40.000 Horas - L70, IP=65, IK=06, 36W, 100-240V 50/60Hz. I | 0.5d | 2024-11-11 15:00 | 2024-11-11 19:00 | 257FS-1d | 44d |  |
| 260 | 1.6.1.5 | **Biblioteca** | 5.5d | 2024-11-07 09:00 | 2024-11-14 13:00 |  | 36.5d |  |
| 261 | 1.6.1.5.1 | **Cubierta** | 5d | 2024-11-07 09:00 | 2024-11-13 19:00 |  | 36.5d |  |
| 262 | 1.6.1.5.1.1 | **Canoas** | 4d | 2024-11-07 09:00 | 2024-11-12 19:00 |  | 36.5d |  |
| 263 |  | Retiro de canoas | 1d | 2024-11-07 09:00 | 2024-11-07 19:00 | 249 | 36.5d | start no earlier than 2024-09-12 09:00 |
| 264 |  | Suministro y colocación de canoa en U en lamina galvanizada calibre 24 moldurada, grafada y soldada en las uniones, desarrollo 0.70 m., incluye:embudos, boquillas, tapas, ganchos de fijación, pintura anticorrosiva verde y de acabado color a definir por in | 1.5d | 2024-11-11 15:00 | 2024-11-12 19:00 | 269 | 36.5d |  |
| 265 | 1.6.1.5.1.2 | **Ruanas** | 5d | 2024-11-07 09:00 | 2024-11-13 19:00 |  | 36.5d |  |
| 266 |  | Retiro de ruanas | 1.5d | 2024-11-07 09:00 | 2024-11-08 13:00 | 263SS | 36.5d |  |
| 267 |  | Suministro y colocación de ruanas en lámina galvanizada calibre 24, incluye mortero, pintura anticorrosiva y a base de aceite, desarrollo 33 cm., pestaña de 5 cm. Canchada de muro, faja en revoque impermeabilizado con filete y todo lo necesario para su co | 1d | 2024-11-13 09:00 | 2024-11-13 19:00 | 264 | 36.5d |  |
| 268 | 1.6.1.5.1.3 | **Mantenimiento** | 2.5d | 2024-11-07 09:00 | 2024-11-11 13:00 |  | 36.5d |  |
| 269 |  | Reparación de techo en teja de barro. Incluye: retiro de manto existente si es necesario, retiro de teja existente, reistalación de la misma, suministro y colocación de teja (del 20%), tablilla (del 100 %) , impermeabilización con manto asfaltico imperpol | 2.5d | 2024-11-07 09:00 | 2024-11-11 13:00 | 266SS | 36.5d |  |
| 270 |  | Retiro de bajantes | 0.5d | 2024-11-08 09:00 | 2024-11-08 13:00 | 263 | 45.5d |  |
| 271 | 1.6.1.5.2 | **Sistema Eléctrico** | 0.5d | 2024-11-14 09:00 | 2024-11-14 13:00 |  | 41.5d |  |
| 272 |  | Suministro, transporte e instalación de luminaria industrial tipo hermética, con tubo LED difusor en policarbonato, 2x18W T8. Chasis en policarbonato resistente al impacto, 6500°K, 3600lm, IRC=70, 40.000 Horas - L70, IP=65, IK=06, 36W, 100-240V 50/60Hz. I | 0.5d | 2024-11-14 09:00 | 2024-11-14 13:00 | 267 | 41.5d |  |
| 273 | 1.6.1.6 | **Circulación** | 5.5d | 2024-11-14 09:00 | 2024-11-21 13:00 |  | 36.5d |  |
| 274 | 1.6.1.6.1 | **Cubierta** | 5d | 2024-11-14 09:00 | 2024-11-20 19:00 |  | 36.5d |  |
| 275 | 1.6.1.6.1.1 | **Canoas** | 3d | 2024-11-14 09:00 | 2024-11-18 19:00 |  | 36.5d |  |
| 276 |  | Retiro de canoas | 1d | 2024-11-14 09:00 | 2024-11-14 19:00 | 267 | 36.5d | start no earlier than 2024-09-12 09:00 |
| 277 |  | Suministro y colocación de canoa en U en lamina galvanizada calibre 24 moldurada, grafada y soldada en las uniones, desarrollo 0.70 m., incluye:embudos, boquillas, tapas, ganchos de fijación, pintura anticorrosiva verde y de acabado color a definir por in | 1.5d | 2024-11-15 15:00 | 2024-11-18 19:00 | 282 | 36.5d |  |
| 278 | 1.6.1.6.1.2 | **Ruanas** | 5d | 2024-11-14 09:00 | 2024-11-20 19:00 |  | 37d |  |
| 279 |  | Retiro de ruanas | 1.5d | 2024-11-14 09:00 | 2024-11-15 13:00 | 276SS | 40.5d |  |
| 280 |  | Suministro y colocación de ruanas en lámina galvanizada calibre 24, incluye mortero, pintura anticorrosiva y a base de aceite, desarrollo 33 cm., pestaña de 5 cm. Canchada de muro, faja en revoque impermeabilizado con filete y todo lo necesario para su co | 2d | 2024-11-19 09:00 | 2024-11-20 19:00 | 277 | 36.5d |  |

| ID | WBS | Task | Duration | Start | Finish | Predecessors | Total float |
| --- | --- | --- | --- | --- | --- | --- | --- |
| 281 | 1.6.1.6.1.3 | **Mantenimiento** | 0.5d | 2024-11-15 09:00 | 2024-11-15 13:00 |  | 36.5d |
| 282 |  | Reparación de techo en teja de barro. Incluye: retiro de manto existente si es necesario, retiro de teja existente, reistalación de la misma, suministro y colocación de teja (del 20%), tablilla (del 100 %) , impermeabilización con manto asfaltico imperpol | 0.5d | 2024-11-15 09:00 | 2024-11-15 13:00 | 283SS | 36.5d |
| 283 |  | Retiro de bajantes | 0.5d | 2024-11-15 09:00 | 2024-11-15 13:00 | 276 | 36.5d |
| 284 | 1.6.1.6.2 | **Sistema Eléctrico** | 0.5d | 2024-11-21 09:00 | 2024-11-21 13:00 |  | 36.5d |
| 285 |  | Suministro, transporte e instalación de luminaria industrial tipo hermética, con tubo LED difusor en policarbonato, 2x18W T8. Chasis en policarbonato resistente al impacto, 6500°K, 3600lm, IRC=70, 40.000 Horas - L70, IP=65, IK=06, 36W, 100-240V 50/60Hz. I | 0.5d | 2024-11-21 09:00 | 2024-11-21 13:00 | 280 | 36.5d |
| 286 | 1.7 | **Bloque 6** | 50.75d? | 2024-09-12 09:00 | 2024-11-21 17:00 |  | 36.25d |
| 287 | 1.7.1 | **Piso 1** | 50.75d? | 2024-09-12 09:00 | 2024-11-21 17:00 |  | 36.25d |
| 288 | 1.7.1.1 | **Portería** | 50.75d? | 2024-09-12 09:00 | 2024-11-21 17:00 |  | 36.25d |
| 289 | 1.7.1.1.1 | **Piso** | 16.25d | 2024-10-17 09:00 | 2024-11-08 11:00 |  | 36.25d |
| 290 |  | Corte de pisos en concreto por medios mecanicos hasta 2" | 0.5d | 2024-10-17 09:00 | 2024-10-17 13:00 | 200SS+5d | 36.25d |
| 291 |  | DEMOLICIÓN DE ANDENES Y PISOS en concreto (acabado y soporte) de espesor máximo de 0.30 m. incluye cargue, transporte y botada de escombros en sitio oficial. Incluye compresor neumático con martillo, retiros de tapas de instalaciones de servicios públicos | 0.5d | 2024-10-17 15:00 | 2024-10-17 19:00 | 290 | 36.25d |
| 292 |  | Excavacion a mano o a maquina en material heterogeneo ( rocas hasta volumenes de 0.10 ) bajo cualquier grado de humedad, para estructuras( diferentes a pilas),para redes y obras complementarias. De 0.00 a 2.00 mt. De profundidad. A mano | 0.5d | 2024-10-18 09:00 | 2024-10-18 13:00 | 291 | 36.25d |
| 293 |  | Cargue y botada de escombros provenientes de explanaciones y excavaciones, medido en sitio compactado. El precio incluye el factor de expansión de material,empacado en costales | 0.5d | 2024-10-18 15:00 | 2024-10-18 19:00 | 292 | 60d |
| 294 |  | Malla electrosoldada tipo D 84. | 0.5d | 2024-10-23 15:00 | 2024-10-23 19:00 | 297 | 36.25d |
| 295 |  | Suministro y colocacion de concreto f' c= 21 Mpa (210 Kg/cm2), incluye formaleta, desmoltante, proteccion y curado para estructuras de acuerdo con las diferentes dimensiones establecidas en los planos y diseños.. Para vigas de amarre de fundación. | 1d | 2024-10-22 09:00 | 2024-10-22 19:00 | 302 | 36.25d |
| 296 |  | Construcción de piso en concreto de 21 Mpa., Incluye juntas de dilatación y acabado como lo determine la interventoría. De espesor 0,08 m. | 3d | 2024-10-24 09:00 | 2024-10-28 19:00 | 294 | 36.25d |
| 297 |  | Construccion de llenos compactados con material de subbase granular. | 0.5d | 2024-10-23 09:00 | 2024-10-23 13:00 | 295 | 36.25d |
| 298 |  | Suminstro e instalacion de enchape pared 30 X 60 cm, enchape rectificado, pasta blanca de Corona o similar Incluye: pegacor, concolor , varilla tipo wing en aluminio anodizado blanco en esquinas y cambio de dirección y todos los demás elementos necesarios | 1d | 2024-11-06 11:00 | 2024-11-07 11:00 | 327 | 45.75d |
| 299 |  | Suministro e instalación de piso ceramica tipo mikonos de 33,8 mm. X33,8 mm. color a definir en obra ,para unidades sanitarias y restaurantes , incluye mortero de nivelación 1:5 y pegacor. | 1d | 2024-11-07 11:00 | 2024-11-08 11:00 | 298 | 45.75d |
| 300 | 1.7.1.1.2 | **Muro** | 21.5d | 2024-10-18 15:00 | 2024-11-18 19:00 |  | 36.25d |
| 301 | 1.7.1.1.2.1 | **Viga** | 13.5d | 2024-10-18 15:00 | 2024-11-06 19:00 |  | 36.25d |
| 302 |  | F y = 420 Mpa. (4200 kg/cm².) | 1.5d | 2024-10-18 15:00 | 2024-10-21 19:00 | 292 | 36.25d |
| 303 |  | Viga area de 0,20x 0,20 acabado a la vista | 2d | 2024-11-05 09:00 | 2024-11-06 19:00 | 304 | 39d |
| 304 |  | Construcción de MAMPOSTERÍA EN BLOQUE DE CONCRETO 13 Mpa. TIPO CATALÁN DE 10 x 15 x 30 cm, ESPESOR DE 15 cm. Color ROJO, NEGRO, VERDE OLIVA, JASPE, TERRACOTA, MARRÓN, ANTICADO,ARENA, OCRE que cumpla norma NTC 4026 y 4076. Incluye: mortero de pega 0.25:1:4 | 3d | 2024-10-31 09:00 | 2024-11-04 19:00 | 296FS+2d | 36.25d |
| 305 |  | Concreto grauting para vaciado en mamposteria estructural. | 2d | 2024-11-01 09:00 | 2024-11-04 19:00 | 304SS+1d | 49d |
| 306 |  | Construcción de dinteles en concreto de 21 Mpa. Incluye: formaleta, protección y curado. No incluye refuerzo. De 0,15x0,20m. | 1d | 2024-11-01 09:00 | 2024-11-01 19:00 | 304SS+1d | 50d |
| 307 |  | Suministro y colocacion de chapa en catalan 10x30 cm. Utilizar cortadora. | 0.5d | 2024-11-15 15:00 | 2024-11-15 19:00 | 318 | 39d |
| 308 |  | Suministro y aplicaciòn de hidrófugo impermeabilizante del tipo siliconite o similar para mamposteria de fachadas dos manos | 1d | 2024-11-18 09:00 | 2024-11-18 19:00 | 307 | 39d |
| 309 | 1.7.1.1.3 | **Cubierta** | 46.5d? | 2024-09-12 09:00 | 2024-11-15 13:00 |  | 40.5d |
| 310 | 1.7.1.1.3.1 | **Teja** | 44.5d? | 2024-09-12 09:00 | 2024-11-13 13:00 |  | 42.5d |
| 311 |  | Construcción de techo en teja de barro.El contratista calculara la estructura para una carga de 210 kg/m2 se requiere diseño estructural y memorias con previa aprobaciòn de la interventoria, incluye: alfardas de secciòn 21/2"x6" comerciales, solera 21/2"x | 1.5d | 2024-11-12 09:00 | 2024-11-13 13:00 | 303FS+3d | 39d |
| 312 |  | <Tarea nueva> | 1d? | 2024-09-12 09:00 | 2024-09-12 19:00 |  | 86d |
| 313 | 1.7.1.1.3.2 | **Mantenimiento** | 0.5d | 2024-11-13 15:00 | 2024-11-13 19:00 |  | 39d |
| 314 |  | Reparación de techo en teja de barro. Incluye: retiro de manto existente si es necesario, retiro de teja existente, reistalación de la misma, suministro y colocación de teja (del 20%), tablilla (del 100 %) , impermeabilización con manto asfaltico imperpol | 0.5d | 2024-11-13 15:00 | 2024-11-13 19:00 | 311 | 39d |
| 315 | 1.7.1.1.3.3 | **Canoa** | 0.5d | 2024-11-14 09:00 | 2024-11-14 13:00 |  | 39d |
| 316 |  | Suministro y colocación de canoa en U en lamina galvanizada calibre 24 moldurada, grafada y soldada en las uniones, desarrollo 0.70 m., incluye:embudos, boquillas, tapas, ganchos de fijación, pintura anticorrosiva verde y de acabado color a definir por in | 0.5d | 2024-11-14 09:00 | 2024-11-14 13:00 | 314 | 39d |
| 317 | 1.7.1.1.3.4 | **Ruana** | 1d | 2024-11-14 15:00 | 2024-11-15 13:00 |  | 39d |
| 318 |  | Suministro y colocación de ruanas en lámina galvanizada calibre 24, incluye mortero, pintura anticorrosiva y a base de aceite, desarrollo 33 cm., pestaña de 5 cm. Canchada de muro, faja en revoque impermeabilizado con filete y todo lo necesario para su co | 1d | 2024-11-14 15:00 | 2024-11-15 13:00 | 316 | 39d |
| 319 | 1.7.1.1.4 | **Red Sanitaria** | 4.25d | 2024-10-31 09:00 | 2024-11-06 11:00 |  | 36.25d |
| 320 |  | Suministro y colocación de tubería PVC-S para aguas negras y aguas lluvias. Incluye: accesorios, limpiador y soldaduras . Ø = 2". | 1d | 2024-10-31 09:00 | 2024-10-31 19:00 | 304SS | 36.25d |
| 321 |  | Suministro y colocación de tubería PVC-S para aguas negras y aguas lluvias. Incluye: accesorios, limpiador y soldaduras . Ø = 4". | 1d | 2024-11-01 09:00 | 2024-11-01 19:00 | 320 | 45.75d |
| 322 |  | Construcción de salidas sanitarias en tuberia PVC-S; incluye accesorios ( considerada de la Yee al aparato). En 2 pulgadas, de L=1,50/2,00 m. | 0.5d | 2024-11-04 09:00 | 2024-11-04 13:00 | 321 | 45.75d |
| 323 |  | Construcción de salidas sanitarias en tuberia PVC-S; incluye accesorios ( considerada de la Yee al aparato). En 4 pulgadas, de L=1,50/2,00 m. | 0.5d | 2024-11-04 09:00 | 2024-11-04 13:00 | 322SS | 45.75d |
| 324 |  | Suministro y colocación de Sanitario bajo consumo, a color. Incluye: brida de fijación, tapon con rosca para brida del color del sanitario, grifería, abasto metálico,( con manguera flexible), emboquillado con silicona antihongos y todos los elementos nece | 0.25d | 2024-11-04 17:00 | 2024-11-04 19:00 | 331 | 45.75d |
| 325 |  | Suministro y colocación de Lavamanos Integral, a color. Incluye Griferia Koral metalica, baja para lavamanos, llave de abastos y todos los elementos necesarios para su correcto funcionamiento. | 0.25d | 2024-11-04 17:00 | 2024-11-04 19:00 | 324SS | 45.75d |
| 326 |  | Suministro y colocación de rejilla de piso anti cucarachas en acero inoxidable 10X10 tipo grival o similar. Ø = 2". | 0.25d | 2024-11-05 11:00 | 2024-11-05 13:00 | 332 | 45.75d |
| 327 |  | Suministro, transporte e instalación de lavaescobas prefabricado en granito + cemento blanco de 0,60 m. x 0,42 x 0,25 m. tipo Cimbrados. Incluye : desagüe conformado por 1 unión, tubería PVC- S de 11/2", 1 sifón con tapón roscado, 1 codo de 90 c x c, 1 ad | 0.5d | 2024-11-05 17:00 | 2024-11-06 11:00 | 333 | 45.75d |
| 328 | 1.7.1.1.5 | **Red Hidraúlica** | 1.25d | 2024-11-04 15:00 | 2024-11-05 17:00 |  | 45.75d |
| 329 |  | Suministro y colocación de tubería PVC. Presión , incluye accesorios,limpiador y soldaduras Ø = ½" RDE 9 | 0.5d | 2024-11-04 15:00 | 2024-11-04 19:00 | 323 | 45.75d |
| 330 |  | Suministro y colocación de tubería PVC. Presión , incluye accesorios,limpiador y soldaduras. Ø = ¾".RDE 11 | 0.25d | 2024-11-04 15:00 | 2024-11-04 17:00 | 329SS | 45.75d |
| 331 |  | Construcción de salida hidraulica en tuberia PVC-P; incluye: tuberia , accesorios, camara de aire y terminales en cobre, limpiador , soldadura, L= 0,50 a 2,00 m. ( considerada de red principal al aparato). Ø = ½" RDE 9, 500 PSI | 0.25d | 2024-11-04 15:00 | 2024-11-04 17:00 | 330SS | 45.75d |
| 332 |  | Suministro, transporte e instalación de abasto llave metalica.Incluye: retiro del existente. Griferia Koral metalica, baja para lavamanos | 0.25d | 2024-11-05 09:00 | 2024-11-05 11:00 | 325 | 45.75d |
| 333 |  | Suministro e instalación de llaves de paso, tipo Red white. Incluye todos los accesorios necesarios para su correcto funcionamiento, de : Diametro 3/4" | 0.25d | 2024-11-05 15:00 | 2024-11-05 17:00 | 326 | 45.75d |
| 334 | 1.7.1.1.6 | **Carpintería Metálica** | 1d | 2024-11-18 09:00 | 2024-11-18 19:00 |  | 39d |
| 335 | 1.7.1.1.6.1 | **Puerta** | 0.5d | 2024-11-18 09:00 | 2024-11-18 13:00 |  | 39d |
| 336 |  | Suministro, transporte e instalación de puerta metálica, un (1) ala batiente en lámina cold rolled calibre 18, entamborada lisa, rellena con porón (poliuretano expandido), con bastidor perimetral en tubería PTS de 40x40x2 mm. y refuerzos horizontales en t | 0.5d | 2024-11-18 09:00 | 2024-11-18 13:00 | 307 | 39d |
| 337 | 1.7.1.1.6.2 | **Ventana** | 0.5d | 2024-11-18 15:00 | 2024-11-18 19:00 |  | 39d |
| 338 |  | Suministro, transporte y colocación de ventanas en aluminio anodizado natural y cristal templado de 6 mm., sistema 8025 de alúmina o equivalente y sistema Vp-3831. parte superior en celosía fija de aluminio anodizado natural, parte inferior dividida en va | 0.5d | 2024-11-18 15:00 | 2024-11-18 19:00 | 336 | 39d |
| 339 | 1.7.1.1.7 | **Sistema Eléctrico** | 13.75d | 2024-11-04 09:00 | 2024-11-21 17:00 |  | 36.25d |
| 340 |  | Inspección, diagnóstico y adecuación de redes electricas ante fallas de energía y emergencias que afecten la continuidad del proceso educativo. Incluye: diagnóstico, restablecimiento del servicio de energía, reencendido de equipos, corrección/aislamiento | 1d | 2024-11-04 09:00 | 2024-11-04 19:00 | 320SS+2d | 36.25d |
| 341 |  | Mano de obra para la organización de cableados varios existentes en canaleta 11x5/12x5 cm. No incluye canaleta. | 2d | 2024-11-19 11:00 | 2024-11-21 11:00 | 354 | 36.25d |
| 342 |  | Retiro de instalaciones y elementos eléctricos existentes. Incluye el reintegro donde la interventoría/supervisión lo indique. | 1d | 2024-11-08 09:00 | 2024-11-08 19:00 | 340FS+3d | 36.25d |
| 343 |  | Suministro, transporte e instalación de tubería metálica EMT 1/2". Incluye adaptadores, uniones, grapas doble ala, marcación y demás accesorios necesarios para su correcta instalación. | 0.5d | 2024-11-11 09:00 | 2024-11-11 13:00 | 342 | 36.25d |
| 344 |  | Suministro, transporte e instalación de caja metálica 12X12X5cm, de sobreponer, con tapa atornillada (tapa lisa/tapa toma/tapa suiche), calibre 20, pintura electrostática gris. Incluye accesorios de fijación y demás elementos necesarios para su correcta i | 0.5d | 2024-11-11 15:00 | 2024-11-11 19:00 | 343 | 36.25d |
| 345 |  | Suministro, transporte e instalación de tablero de 6 circuitos monofásico 3H, 120V con puerta y chapa, para breaker enchufable, de lamina cold rolled con aplicación de pintura electrostática: Blanco RAL 9003, barraje en cobre de 75A, barra de neutro y bar | 0.5d | 2024-11-12 09:00 | 2024-11-12 13:00 | 344 | 36.25d |
| 346 |  | Suministro, transporte e instalación de SALIDA eléctrica para TOMACORRIENTE doble con polo a tierra color blanco, 15A, 125V, en tubería EMT. Incluye: 3m de cable de cobre 1xNº12 AWG Libre de halógenos (HF) y Resistente a la llama (FR), marcación, caja met | 0.25d | 2024-11-12 15:00 | 2024-11-12 17:00 | 345 | 36.25d |
| 347 |  | Suministro, transporte e instalación de SALIDA eléctrica para TOMACORRIENTE doble GFCI, 15A, 125V, en tubería EMT. Incluye: 3m de cable de cobre 1xNº12 AWG Libre de halógenos (HF) y Resistente a la llama (FR), marcación, caja metálica 12x12x5cm, aparato c | 0.25d | 2024-11-12 17:00 | 2024-11-12 19:00 | 346 | 36.25d |
| 348 |  | Suministro, transporte e instalación de salida eléctrica para iluminación 120V, en tubería EMT. Incluye: 3m de cable de cobre 1xNº12 AWG Libre de halógenos (HF) y Resistente a la llama (FR), marcación, caja metálica 12x12x5cm con tapa, conectores tipo res | 0.5d | 2024-11-13 09:00 | 2024-11-13 13:00 | 347 | 36.25d |
| 349 |  | Suministro, transporte e instalación de salida eléctrica para switch doble, 15A, 120V, en tubería EMT. Incluye: 4m de cable de cobre 1xNº12 AWG Libre de halógenos (HF) y Resistente a la llama (FR), marcación, caja metálica 12x12x5cm con tapa, aparato, con | 0.25d | 2024-11-13 15:00 | 2024-11-13 17:00 | 348 | 36.25d |
| 350 |  | Suministro e instalación de interruptor (breaker) termomagnético enchufable 1x20A, Icc=10kA, 120/240V, Certificado UL SWD. | 0.5d | 2024-11-13 17:00 | 2024-11-14 11:00 | 349 | 36.25d |

| ID | WBS | Task | Duration | Start | Finish | Predecessors | Complete | Total float | Constraint |
| --- | --- | --- | --- | --- | --- | --- | --- | --- | --- |
| 351 |  | Suministro, transporte e instalación de alimentador en cable de cobre 3xNo12 AWG, Libre de halógenos (HF), resistente a la llama (FR), 90°C. Incluye accesorios para su correcta instalación y funcionamiento según RETIE. | 1d | 2024-11-14 11:00 | 2024-11-15 11:00 | 350 |  | 36.25d |  |
| 352 |  | Suministro, transporte e instalación de alimentador en cable de cobre 1xNo12 AWG, Libre de halógenos (HF), resistente a la llama (FR), 90°C. Incluye accesorios para su correcta instalación y funcionamiento según RETIE. | 0.5d | 2024-11-15 11:00 | 2024-11-15 17:00 | 351 |  | 36.25d |  |
| 353 |  | Suministro, transporte e instalación de alimentador en cable de cobre 1xNo10 AWG, Libre de halógenos (HF), resistente a la llama (FR), 90°C. Incluye accesorios para su correcta instalación y funcionamiento según RETIE. | 1d | 2024-11-15 17:00 | 2024-11-18 17:00 | 352 |  | 36.25d |  |
| 354 |  | Suministro, transporte e instalación de alimentador en cable de cobre encauchetado 3xNo12 AWG PVC Retardante a la llama (FR) Resistente a la intemperie (SR), 90ºC. Incluye accesorios para su correcta instalación y funcionamiento según RETIE. | 1.5d | 2024-11-15 17:00 | 2024-11-19 11:00 | 353SS |  | 36.25d |  |
| 355 |  | Suministro, transporte e instalación de luminaria industrial tipo hermética, con tubo LED difusor en policarbonato, 2x18W T8. Chasis en policarbonato resistente al impacto, 6500°K, 3600lm, IRC=70, 40.000 Horas - L70, IP=65, IK=06, 36W, 100-240V 50/60Hz. I | 0.5d | 2024-11-21 11:00 | 2024-11-21 17:00 | 341 |  | 36.25d |  |
| 356 |  | Suministro, transporte e instalación de luminaria LED tipo reflector 200W para interiores o exteriores, con soporte metálico para instalar sobrepuesto y driver integrado en la luminaria. Chasis en alumino extruído resistente a la humedad, 6500°K, 20000lm, | 0.5d | 2024-11-21 11:00 | 2024-11-21 17:00 | 355SS |  | 36.25d |  |
| 357 | 1.8 | **ÁREAS TRANSVERSALES** | 87d | 2024-09-12 09:00 A | 2025-01-10 19:00 |  | 44% | 0d |  |
| 358 |  | Ambiental | 87d | 2024-09-12 09:00 A | 2025-01-10 19:00 |  | 25% | 0d | start no earlier than 2024-09-12 09:00 |
| 359 |  | Seguridad y salud en el trabajo | 87d | 2024-09-12 09:00 A | 2025-01-10 19:00 |  | 25% | 0d | start no earlier than 2024-09-12 09:00 |
| 360 |  | Social | 87d | 2024-09-12 09:00 A | 2025-01-10 19:00 |  | 25% | 0d | start no earlier than 2024-09-12 09:00 |
| 361 |  | Poliza | 87d | 2024-09-12 09:00 A | 2025-01-10 19:00 A |  | 100% |  | start no earlier than 2024-09-12 09:00 |
| 362 | 1.9 | **GERENCIA DE PROYECTO** | 87d | 2024-09-12 09:00 | 2025-01-10 19:00 |  |  | 0d |  |
| 363 |  | Gestión de adquisiciones | 87d | 2024-09-12 09:00 | 2025-01-10 19:00 |  |  | 0d | start no earlier than 2024-09-12 09:00 |
| 364 |  | FIN | 0d | 2025-01-10 19:00 | 2025-01-10 19:00 |  |  | 0d | finish no earlier than 2025-01-10 19:00 |

## Version 2 (data date 2024-10-12, saved 2024-10-21, file version2.mpp)

Note of the change: add new fns

Last finish stays 2025-01-10. Complete tasks 43 → 26.

Changed:

| ID | Task | Start | Finish | Complete | Total float |
| --- | --- | --- | --- | --- | --- |
| 1 | **S.E. VENTANITAS** |  |  | 30% → 31% |  |
| 2 | INICIO | 2024-09-12 19:00 A | 2024-09-12 19:00 A | 0% → 100% | 86d → none |
| 3 | **Bloque 2** |  |  | 71% → 64% |  |
| 4 | **Piso 1** |  |  | 71% → 64% |  |
| 5 | **Aula 3** |  |  | 95% → 68% |  |
| 6 | **Cubiertas** |  |  | 95% → 68% |  |
| 7 | **Canoas** |  | 2024-10-01 13:00 A → 2024-10-01 13:00 | 100% → 33% | none → 72.5d |
| 9 | Suministro y colocación de canoa en U en lamina galvanizada calibre 24 moldurada, grafada y soldada en las uniones, desarrollo 0.70 m., incluye:embudos, boquillas, tapas, ganchos de fijación, pintura anticorrosiva verde y de acabado color a definir por in | 2024-09-27 15:00 A → 2024-09-27 15:00 | 2024-10-01 13:00 A → 2024-10-01 13:00 | 100% → 0% | none → 72.5d |
| 10 | **Ruanas** |  | 2024-10-02 13:00 A → 2024-10-02 13:00 | 100% → 60% | none → 72.5d |
| 12 | Suministro y colocación de ruanas en lámina galvanizada calibre 24, incluye mortero, pintura anticorrosiva y a base de aceite, desarrollo 33 cm., pestaña de 5 cm. Canchada de muro, faja en revoque impermeabilizado con filete y todo lo necesario para su co | 2024-10-01 15:00 A → 2024-10-01 15:00 | 2024-10-02 13:00 A → 2024-10-02 13:00 | 100% → 0% | none → 72.5d |
| 15 | Retiro de bajantes | 2024-09-25 09:00 A | 2024-09-25 13:00 A | 0% → 100% | 77.5d → none |
| 16 | **Aula 4** |  |  | 56% → 67% |  |
| 17 | **Cubierta** |  |  | 56% → 67% |  |
| 18 | **Canoas** | 2024-10-02 15:00 A |  | 0% → 43% | 67.5d → 66.5d |
| 20 | Retiro de canoas | 2024-10-02 15:00 A | 2024-10-03 19:00 A | 0% → 100% | 70.5d → none |
| 21 | **Ruanas** |  | 2024-10-10 13:00 A → 2024-10-10 13:00 | 100% → 50% | none → 66.5d |
| 23 | Suministro y colocación de ruanas en lámina galvanizada calibre 24, incluye mortero, pintura anticorrosiva y a base de aceite, desarrollo 33 cm., pestaña de 5 cm. Canchada de muro, faja en revoque impermeabilizado con filete y todo lo necesario para su co | 2024-10-09 15:00 A → 2024-10-09 15:00 | 2024-10-10 13:00 A → 2024-10-10 13:00 | 100% → 0% | none → 66.5d |
| 26 | Retiro de bajantes | 2024-10-04 09:00 A | 2024-10-04 13:00 A | 0% → 100% | 70.5d → none |
| 27 | **Circulación** |  |  | 62% → 57% |  |
| 28 | **Cubierta** |  |  | 62% → 57% |  |
| 35 | **Mantenimientos** |  | 2024-10-15 19:00 A → 2024-10-15 19:00 | 100% → 85% | none → 22.5d |
| 36 | Reparación de techo en teja de barro. Incluye: retiro de manto existente si es necesario, retiro de teja existente, reistalación de la misma, suministro y colocación de teja (del 20%), tablilla (del 100 %) , impermeabilización con manto asfaltico imperpol |  | 2024-10-15 19:00 A → 2024-10-15 19:00 | 100% → 85% | none → 22.5d |
| 108 | **Bloque 3** |  | 2024-10-22 13:00 A → 2024-10-22 13:00 | 100% → 37% | none → 58.5d |
| 109 | **Piso 1** |  | 2024-10-22 13:00 A → 2024-10-22 13:00 | 100% → 37% | none → 58.5d |
| 110 | **Coordinación** |  | 2024-09-27 19:00 A → 2024-09-27 19:00 | 100% → 55% | none → 75d |
| 111 | **Cubierta** |  | 2024-09-27 19:00 A → 2024-09-27 19:00 | 100% → 55% | none → 75d |
| 112 | **Canoas** |  | 2024-09-26 13:00 A → 2024-09-26 13:00 | 100% → 33% | none → 75d |
| 114 | Suministro y colocación de canoa en U en lamina galvanizada calibre 24 moldurada, grafada y soldada en las uniones, desarrollo 0.70 m., incluye:embudos, boquillas, tapas, ganchos de fijación, pintura anticorrosiva verde y de acabado color a definir por in | 2024-09-25 15:00 A → 2024-09-25 15:00 | 2024-09-26 13:00 A → 2024-09-26 13:00 | 100% → 0% | none → 75d |
| 115 | **Ruanas** |  | 2024-09-27 19:00 A → 2024-09-27 19:00 | 100% → 40% | none → 75d |
| 117 | Suministro y colocación de ruanas en lámina galvanizada calibre 24, incluye mortero, pintura anticorrosiva y a base de aceite, desarrollo 33 cm., pestaña de 5 cm. Canchada de muro, faja en revoque impermeabilizado con filete y todo lo necesario para su co | 2024-09-26 15:00 A → 2024-09-26 15:00 | 2024-09-27 19:00 A → 2024-09-27 19:00 | 100% → 0% | none → 75d |
| 118 | **Mantenimiento** |  | 2024-09-25 13:00 A → 2024-09-25 13:00 | 100% → 85% | none → 75d |
| 119 | Reparación de techo en teja de barro. Incluye: retiro de manto existente si es necesario, retiro de teja existente, reistalación de la misma, suministro y colocación de teja (del 20%), tablilla (del 100 %) , impermeabilización con manto asfaltico imperpol |  | 2024-09-25 13:00 A → 2024-09-25 13:00 | 100% → 85% | none → 75d |
| 121 | **Sala de Profesores** |  | 2024-10-01 13:00 A → 2024-10-01 13:00 | 100% → 46% | none → 73.5d |
| 122 | **Cubierta** |  | 2024-10-01 13:00 A → 2024-10-01 13:00 | 100% → 46% | none → 73.5d |
| 123 | **Canoas** |  | 2024-09-27 19:00 A → 2024-09-27 19:00 | 100% → 33% | none → 73.5d |
| 125 | Suministro y colocación de canoa en U en lamina galvanizada calibre 24 moldurada, grafada y soldada en las uniones, desarrollo 0.70 m., incluye:embudos, boquillas, tapas, ganchos de fijación, pintura anticorrosiva verde y de acabado color a definir por in | 2024-09-27 09:00 A → 2024-09-27 09:00 | 2024-09-27 19:00 A → 2024-09-27 19:00 | 100% → 0% | none → 73.5d |
| 126 | **Ruanas** |  | 2024-10-01 13:00 A → 2024-10-01 13:00 | 100% → 40% | none → 73.5d |
| 128 | Suministro y colocación de ruanas en lámina galvanizada calibre 24, incluye mortero, pintura anticorrosiva y a base de aceite, desarrollo 33 cm., pestaña de 5 cm. Canchada de muro, faja en revoque impermeabilizado con filete y todo lo necesario para su co | 2024-09-30 09:00 A → 2024-09-30 09:00 | 2024-10-01 13:00 A → 2024-10-01 13:00 | 100% → 0% | none → 73.5d |
| 129 | **Mantenimiento** |  | 2024-09-26 19:00 A → 2024-09-26 19:00 | 100% → 85% | none → 73.5d |
| 130 | Reparación de techo en teja de barro. Incluye: retiro de manto existente si es necesario, retiro de teja existente, reistalación de la misma, suministro y colocación de teja (del 20%), tablilla (del 100 %) , impermeabilización con manto asfaltico imperpol |  | 2024-09-26 19:00 A → 2024-09-26 19:00 | 100% → 85% | none → 73.5d |
| 131 | Retiro de bajantes | 2024-09-26 09:00 A → 2024-09-26 09:00 | 2024-09-26 13:00 A → 2024-09-26 13:00 | 100% → 0% | none → 76.5d |
| 132 | **Baños Niñas** |  | 2024-10-07 13:00 A → 2024-10-07 13:00 | 100% → 55% | none → 65d |
| 133 | **Cubierta** |  | 2024-10-07 13:00 A → 2024-10-07 13:00 | 100% → 55% | none → 65d |
| 134 | **Canoas** |  | 2024-10-03 19:00 A → 2024-10-03 19:00 | 100% → 33% | none → 65d |
| 136 | Suministro y colocación de canoa en U en lamina galvanizada calibre 24 moldurada, grafada y soldada en las uniones, desarrollo 0.70 m., incluye:embudos, boquillas, tapas, ganchos de fijación, pintura anticorrosiva verde y de acabado color a definir por in | 2024-10-03 09:00 A → 2024-10-03 09:00 | 2024-10-03 19:00 A → 2024-10-03 19:00 | 100% → 0% | none → 65d |
| 137 | **Ruanas** |  | 2024-10-07 13:00 A → 2024-10-07 13:00 | 100% → 40% | none → 65d |
| 139 | Suministro y colocación de ruanas en lámina galvanizada calibre 24, incluye mortero, pintura anticorrosiva y a base de aceite, desarrollo 33 cm., pestaña de 5 cm. Canchada de muro, faja en revoque impermeabilizado con filete y todo lo necesario para su co | 2024-10-04 09:00 A → 2024-10-04 09:00 | 2024-10-07 13:00 A → 2024-10-07 13:00 | 100% → 0% | none → 65d |
| 140 | **Mantenimiento** |  | 2024-10-02 19:00 A → 2024-10-02 19:00 | 100% → 85% | none → 65d |
| 141 | Reparación de techo en teja de barro. Incluye: retiro de manto existente si es necesario, retiro de teja existente, reistalación de la misma, suministro y colocación de teja (del 20%), tablilla (del 100 %) , impermeabilización con manto asfaltico imperpol |  | 2024-10-02 19:00 A → 2024-10-02 19:00 | 100% → 85% | none → 65d |
| 143 | **Baños Niños** | 2024-10-07 15:00 A → 2024-10-07 15:00 | 2024-10-11 19:00 A → 2024-10-11 19:00 | 100% → 0% | none → 65d |
| 144 | **Cubierta** | 2024-10-07 15:00 A → 2024-10-07 15:00 | 2024-10-11 19:00 A → 2024-10-11 19:00 | 100% → 0% | none → 65d |
| 145 | **Canoa** | 2024-10-07 15:00 A → 2024-10-07 15:00 | 2024-10-09 19:00 A → 2024-10-09 19:00 | 100% → 0% | none → 65d |
| 146 | Retiro de canoas | 2024-10-07 15:00 A → 2024-10-07 15:00 | 2024-10-07 19:00 A → 2024-10-07 19:00 | 100% → 0% | none → 65d |
| 147 | Suministro y colocación de canoa en U en lamina galvanizada calibre 24 moldurada, grafada y soldada en las uniones, desarrollo 0.70 m., incluye:embudos, boquillas, tapas, ganchos de fijación, pintura anticorrosiva verde y de acabado color a definir por in | 2024-10-09 09:00 A → 2024-10-09 09:00 | 2024-10-09 19:00 A → 2024-10-09 19:00 | 100% → 0% | none → 65d |
| 148 | **Ruanas** | 2024-10-07 15:00 A → 2024-10-07 15:00 | 2024-10-11 19:00 A → 2024-10-11 19:00 | 100% → 0% | none → 65d |
| 149 | Retiro de ruanas | 2024-10-07 15:00 A → 2024-10-07 15:00 | 2024-10-08 19:00 A → 2024-10-08 19:00 | 100% → 0% | none → 65d |
| 150 | Suministro y colocación de ruanas en lámina galvanizada calibre 24, incluye mortero, pintura anticorrosiva y a base de aceite, desarrollo 33 cm., pestaña de 5 cm. Canchada de muro, faja en revoque impermeabilizado con filete y todo lo necesario para su co | 2024-10-10 09:00 A → 2024-10-10 09:00 | 2024-10-11 19:00 A → 2024-10-11 19:00 | 100% → 0% | none → 65d |
| 151 | **Mantenimiento** | 2024-10-07 15:00 A → 2024-10-07 15:00 | 2024-10-08 19:00 A → 2024-10-08 19:00 | 100% → 0% | none → 65d |
| 152 | Reparación de techo en teja de barro. Incluye: retiro de manto existente si es necesario, retiro de teja existente, reistalación de la misma, suministro y colocación de teja (del 20%), tablilla (del 100 %) , impermeabilización con manto asfaltico imperpol | 2024-10-07 15:00 A → 2024-10-07 15:00 | 2024-10-08 19:00 A → 2024-10-08 19:00 | 100% → 0% | none → 65d |
| 153 | Retiro de bajantes | 2024-10-08 09:00 A → 2024-10-08 09:00 | 2024-10-08 13:00 A → 2024-10-08 13:00 | 100% → 0% | none → 68.5d |
| 154 | **Circulación** |  | 2024-10-22 13:00 A → 2024-10-22 13:00 | 100% → 36% | none → 58.5d |
| 155 | **Cubierta** |  | 2024-10-22 13:00 A → 2024-10-22 13:00 | 100% → 36% | none → 58.5d |
| 156 | **Canoas** |  | 2024-10-18 13:00 A → 2024-10-18 13:00 | 100% → 33% | none → 39d |
| 158 | Suministro y colocación de canoa en U en lamina galvanizada calibre 24 moldurada, grafada y soldada en las uniones, desarrollo 0.70 m., incluye:embudos, boquillas, tapas, ganchos de fijación, pintura anticorrosiva verde y de acabado color a definir por in | 2024-10-17 15:00 A → 2024-10-17 15:00 | 2024-10-18 13:00 A → 2024-10-18 13:00 | 100% → 0% | none → 39d |
| 159 | **Ruanas** |  | 2024-10-22 13:00 A → 2024-10-22 13:00 | 100% → 50% | none → 39d |
| 161 | Suministro y colocación de ruanas en lámina galvanizada calibre 24, incluye mortero, pintura anticorrosiva y a base de aceite, desarrollo 33 cm., pestaña de 5 cm. Canchada de muro, faja en revoque impermeabilizado con filete y todo lo necesario para su co | 2024-10-18 15:00 A → 2024-10-18 15:00 | 2024-10-22 13:00 A → 2024-10-22 13:00 | 100% → 0% | none → 39d |
| 162 | **Mantenimiento** |  | 2024-10-17 13:00 A → 2024-10-17 13:00 | 100% → 25% | none → 39d |
| 163 | Reparación de techo en teja de barro. Incluye: retiro de manto existente si es necesario, retiro de teja existente, reistalación de la misma, suministro y colocación de teja (del 20%), tablilla (del 100 %) , impermeabilización con manto asfaltico imperpol |  | 2024-10-17 13:00 A → 2024-10-17 13:00 | 100% → 25% | none → 39d |
| 164 | Retiro de bajantes | 2024-10-14 15:00 A → 2024-10-14 15:00 | 2024-10-14 19:00 A → 2024-10-14 19:00 | 100% → 0% | none → 64d |
| 200 | **Bloque 5** | 2024-10-10 09:00 A |  | 0% → 6% |  |

| ID | Task | Start | Finish | Complete | Total float |
| --- | --- | --- | --- | --- | --- |
| 201 | **Piso 1** | 2024-10-10 09:00 A |  | 0% → 6% |  |
| 202 | **Cocina** | 2024-10-10 09:00 A |  | 0% → 29% | 36.5d → 58d |
| 203 | **Cubierta** | 2024-10-10 09:00 A |  | 0% → 54% |  |
| 204 | **Canoas** | 2024-10-10 09:00 A |  | 0% → 50% |  |
| 205 | Retiro de canoas | 2024-10-10 09:00 A | 2024-10-10 13:00 A | 0% → 100% | 36.5d → none |
| 207 | **Ruanas** | 2024-10-10 09:00 A |  | 0% → 50% |  |
| 208 | Retiro de ruanas | 2024-10-10 09:00 A | 2024-10-10 19:00 A | 0% → 100% | 36.5d → none |
| 210 | **Mantenimiento** | 2024-10-10 09:00 A |  | 0% → 57% |  |
| 211 | Reparación de techo en teja de barro. Incluye: retiro de manto existente si es necesario, retiro de teja existente, reistalación de la misma, suministro y colocación de teja (del 20%), tablilla (del 100 %) , impermeabilización con manto asfaltico imperpol | 2024-10-10 09:00 A |  | 0% → 57% |  |
| 286 | **Bloque 6** | 2024-09-12 09:00 A |  | 0% → 2% |  |
| 287 | **Piso 1** | 2024-09-12 09:00 A |  | 0% → 2% |  |
| 288 | **Portería** | 2024-09-12 09:00 A |  | 0% → 2% |  |
| 309 | **Cubierta** | 2024-09-12 09:00 A |  | 0% → 22% | 40.5d → 39d |
| 310 | **Teja** | 2024-09-12 09:00 A |  | 0% → 40% | 42.5d → 39d |
| 312 | <Tarea nueva> | 2024-09-12 09:00 A | 2024-09-12 19:00 A | 0% → 100% | 86d → none |
| 362 | **GERENCIA DE PROYECTO** | 2024-09-12 09:00 A |  | 0% → 25% |  |
| 363 | Gestión de adquisiciones | 2024-09-12 09:00 A |  | 0% → 25% |  |
