# PROGRAMA - MANTENIMIENTO DE REDES SEDE CARIBE

How a schedule from MS Project changed from version to version. A marks actual dates.

## Version 1 (saved 2024-08-01, file version2.mpp)

Note of the change: add new fns

| ID | WBS | Task | Duration | Start | Finish | Predecessors | Total float |
| --- | --- | --- | --- | --- | --- | --- | --- |
| 1 |  | INICIO DEL PROYECTO | 0d | 2024-07-22 | 2024-07-22 |  | 0d |
| 2 | 2 | **EJECUCIÓN DE LA OBRA** | 150d | 2024-07-22 | 2024-12-18 |  | 0d |
| 3 | 2.1 | **FASE 1** | 45d | 2024-07-22 | 2024-09-04 |  | 23d |
| 4 | 2.1.1 | **Red aguas residuales (Externa)** | 45d | 2024-07-22 | 2024-09-04 |  | 105d |
| 5 |  | Construcción de cerramientos y campamentos | 8d | 2024-07-22 | 2024-07-29 | 1 | 105d |
| 6 |  | Localización y replanteo | 10d | 2024-07-25 | 2024-08-03 | 5FS-5d | 105d |
| 7 |  | Demoliciones y retiros | 10d | 2024-08-01 | 2024-08-10 | 6FS-3d | 105d |
| 8 |  | Excavaciones y entibados | 10d | 2024-08-05 | 2024-08-14 | 7FS-6d | 105d |
| 9 |  | Cargue de material de excavación | 10d | 2024-08-08 | 2024-08-17 | 8FS-7d | 105d |
| 10 |  | Nivelación y colocación de cama de triturado para tuberia | 10d | 2024-08-12 | 2024-08-21 | 9FS-6d | 105d |
| 11 |  | Instalación de tuberia novafort | 10d | 2024-08-17 | 2024-08-26 | 10FS-5d | 105d |
| 12 |  | Construcción de llenos | 10d | 2024-08-22 | 2024-08-31 | 11FS-5d | 105d |
| 13 |  | Construcción de camaras de inspección 1,20 | 10d | 2024-08-26 | 2024-09-04 | 12FS-6d | 105d |
| 14 | 2.1.2 | **Red aguas lluvias (Externa)** | 35d | 2024-08-01 | 2024-09-04 |  | 105d |
| 15 |  | Localización y replanteo | 5d | 2024-08-01 | 2024-08-05 | 1FS+10d | 105d |
| 16 |  | Demoliciones y retiros | 7d | 2024-08-06 | 2024-08-12 | 15 | 105d |
| 17 |  | Excavaciones y entibados | 7d | 2024-08-09 | 2024-08-15 | 16FS-4d | 105d |
| 18 |  | Cargue de material de excavación | 7d | 2024-08-12 | 2024-08-18 | 17FS-4d | 105d |
| 19 |  | Nivelación y colocación de cama de triturado para tuberia | 7d | 2024-08-15 | 2024-08-21 | 18FS-4d | 105d |
| 20 |  | Instalación de tuberia | 7d | 2024-08-18 | 2024-08-24 | 19FS-4d | 105d |
| 21 |  | Construcción de llenos | 7d | 2024-08-21 | 2024-08-27 | 20FS-4d | 105d |
| 22 |  | Construcción de camaras de inspección 1,20 | 7d | 2024-08-26 | 2024-09-01 | 21FS-2d | 105d |
| 23 |  | Construcción de sumideros | 7d | 2024-08-29 | 2024-09-04 | 22FS-4d | 105d |
| 24 | 2.1.3 | **Red de aguas residuales (Sotano)** | 35d | 2024-08-01 | 2024-09-04 |  | 105d |
| 25 |  | Localización y replanteo | 5d | 2024-08-01 | 2024-08-05 | 1FS+10d | 105d |
| 26 |  | Diagnostico de redes | 3d | 2024-08-06 | 2024-08-08 | 25 | 105d |
| 27 |  | Demoliciones y retiros | 7d | 2024-08-09 | 2024-08-15 | 26 | 105d |
| 28 |  | Excavaciones y entibados | 7d | 2024-08-12 | 2024-08-18 | 27FS-4d | 105d |
| 29 |  | Cargue de material de excavación | 7d | 2024-08-15 | 2024-08-21 | 28FS-4d | 105d |
| 30 |  | Nivelación y colocación de cama de triturado para tuberia | 7d | 2024-08-18 | 2024-08-24 | 29FS-4d | 105d |
| 31 |  | Instalación de tuberia novafort y pvc -accesorios | 7d | 2024-08-21 | 2024-08-27 | 30FS-4d | 105d |
| 32 |  | Construcción de llenos | 7d | 2024-08-24 | 2024-08-30 | 31FS-4d | 105d |
| 33 |  | Construcción de cajas de inspección | 7d | 2024-08-29 | 2024-09-04 | 32FS-2d | 105d |
| 34 | 2.1.4 | **Red de aguas lluvias (Sotano)** | 31d | 2024-08-05 | 2024-09-04 |  | 105d |
| 35 |  | Localización y replanteo | 2d | 2024-08-05 | 2024-08-06 | 1FS+14d | 105d |
| 36 |  | Demoliciones y retiros | 7d | 2024-08-06 | 2024-08-12 | 35FS-1d | 105d |
| 37 |  | Excavaciones y entibados | 7d | 2024-08-10 | 2024-08-16 | 36FS-3d | 105d |
| 38 |  | Cargue de material de excavación | 7d | 2024-08-12 | 2024-08-18 | 37FS-5d | 105d |
| 39 |  | Nivelación y colocación de cama de triturado para tuberia | 8d | 2024-08-15 | 2024-08-22 | 38FS-4d | 105d |
| 40 |  | Instalación de tuberia | 8d | 2024-08-19 | 2024-08-26 | 39FS-4d | 105d |
| 41 |  | Construcción de llenos | 8d | 2024-08-23 | 2024-08-30 | 40FS-4d | 105d |
| 42 |  | Construcción de cajas de sifonadas | 7d | 2024-08-29 | 2024-09-04 | 41FS-2d | 105d |
| 43 | 2.1.5 | **Red de abastos (Edificio)** | 8d | 2024-08-14 | 2024-08-21 |  | 0d |
| 44 |  | Retiros | 5d | 2024-08-14 | 2024-08-18 | 1FS+23d | 0d |
| 45 |  | Instalación de tuberia a presión y accesorios | 7d | 2024-08-15 | 2024-08-21 | 44FS-4d | 0d |
| 46 | 2.1.6 | **Obras civiles** | 20d | 2024-08-16 | 2024-09-04 |  | 0d |
| 47 |  | Construcción de buitrones | 7d | 2024-08-16 | 2024-08-22 | 45FS-6d | 0d |
| 48 |  | Instalación de cielo falso | 4d | 2024-08-21 | 2024-08-24 | 47FS-2d | 0d |
| 49 |  | Csontrucción de mamposteria | 7d | 2024-08-23 | 2024-08-29 | 48FS-2d | 0d |
| 50 |  | Construcción de revoque | 5d | 2024-08-27 | 2024-08-31 | 49FS-3d | 0d |
| 51 |  | Construcción de enchape | 5d | 2024-08-29 | 2024-09-02 | 50FS-3d | 0d |
| 52 |  | Resane y aplicación de pinturas | 4d | 2024-09-01 | 2024-09-04 | 51FS-2d | 0d |
| 53 |  | FIN EJECUCIÓN - FASE 1 | 0d | 2024-09-04 | 2024-09-04 | 52FF | 0d |
| 54 | 2.2 | **FASE 2** | 31d | 2024-09-05 | 2024-10-05 |  | 1d |
| 55 | 2.2.1 | **Red de aguas lluvias (Externa)** | 27d | 2024-09-09 | 2024-10-05 |  | 74d |
| 56 |  | Construcción de cerramientos | 2d | 2024-09-09 | 2024-09-10 | 53FS+4d | 74d |
| 57 |  | Localización y replanteo | 2d | 2024-09-11 | 2024-09-12 | 56 | 74d |
| 58 |  | Demoliciones y retiros | 5d | 2024-09-12 | 2024-09-16 | 57FS-1d | 74d |
| 59 |  | Excavaciones y entibados | 7d | 2024-09-14 | 2024-09-20 | 58FS-3d | 74d |
| 60 |  | Cargue de material de excavación | 7d | 2024-09-16 | 2024-09-22 | 59FS-5d | 74d |
| 61 |  | Nivelación y colocación de cama de triturado para tuberia | 8d | 2024-09-19 | 2024-09-26 | 60FS-4d | 74d |
| 62 |  | Instalación de tuberia | 8d | 2024-09-23 | 2024-09-30 | 61FS-4d | 74d |
| 63 |  | Construcción de llenos | 8d | 2024-09-27 | 2024-10-04 | 62FS-4d | 74d |
| 64 |  | Construcción de camaras de inspección 1,20 | 5d | 2024-10-01 | 2024-10-05 | 63FS-4d | 74d |
| 65 |  | Construcción de sumideros | 3d | 2024-10-03 | 2024-10-05 | 64FS-3d | 74d |
| 66 | 2.2.2 | **Red de aguas residuales (Sotano)** | 31d | 2024-09-05 | 2024-10-05 |  | 74d |
| 67 |  | Construcción de cerramientos | 2d | 2024-09-05 | 2024-09-06 | 53 | 74d |
| 68 |  | Localización y replanteo | 2d | 2024-09-07 | 2024-09-08 | 67 | 74d |
| 69 |  | Demoliciones y retiros | 5d | 2024-09-08 | 2024-09-12 | 68FS-1d | 74d |
| 70 |  | Excavaciones y entibados | 7d | 2024-09-10 | 2024-09-16 | 69FS-3d | 74d |

| ID | WBS | Task | Duration | Start | Finish | Predecessors | Total float |
| --- | --- | --- | --- | --- | --- | --- | --- |
| 71 |  | Cargue de material de excavación | 7d | 2024-09-12 | 2024-09-18 | 70FS-5d | 74d |
| 72 |  | Nivelación y colocación de cama de triturado para tuberia | 8d | 2024-09-15 | 2024-09-22 | 71FS-4d | 74d |
| 73 |  | Instalación de tuberia novafort y pvc -accesorios | 8d | 2024-09-21 | 2024-09-28 | 72FS-2d | 74d |
| 74 |  | Construcción de llenos | 8d | 2024-09-25 | 2024-10-02 | 73FS-4d | 74d |
| 75 |  | Construcción de cajas de inspección | 5d | 2024-10-01 | 2024-10-05 | 74FS-2d | 74d |
| 76 | 2.2.3 | **Red de aguas lluvias (Sotano)** | 29d | 2024-09-07 | 2024-10-05 |  | 74d |
| 77 |  | Construcción de cerramientos | 2d | 2024-09-07 | 2024-09-08 | 53FS+2d | 74d |
| 78 |  | Localización y replanteo | 2d | 2024-09-09 | 2024-09-10 | 77 | 74d |
| 79 |  | Demoliciones y retiros | 5d | 2024-09-10 | 2024-09-14 | 78FS-1d | 74d |
| 80 |  | Excavaciones y entibados | 7d | 2024-09-12 | 2024-09-18 | 79FS-3d | 74d |
| 81 |  | Cargue de material de excavación | 7d | 2024-09-14 | 2024-09-20 | 80FS-5d | 74d |
| 82 |  | Nivelación y colocación de cama de triturado para tuberia | 8d | 2024-09-17 | 2024-09-24 | 81FS-4d | 74d |
| 83 |  | Instalación de tuberia | 8d | 2024-09-21 | 2024-09-28 | 82FS-4d | 74d |
| 84 |  | Construcción de llenos | 8d | 2024-09-25 | 2024-10-02 | 83FS-4d | 74d |
| 85 |  | Construcción de cajas de sifonadas | 5d | 2024-10-01 | 2024-10-05 | 84FS-2d | 74d |
| 86 | 2.2.4 | **Red de abastos (Edificio)** | 17d | 2024-09-06 | 2024-09-22 |  | 0d |
| 87 |  | Retiros | 7d | 2024-09-06 | 2024-09-12 | 53FS+1d | 0d |
| 88 |  | Instalación de tuberia a presión y accesorios | 10d | 2024-09-13 | 2024-09-22 | 87 | 0d |
| 89 | 2.2.5 | **Obras civiles** | 19d | 2024-09-17 | 2024-10-05 |  | 0d |
| 90 |  | Construcción de buitrones | 5d | 2024-09-17 | 2024-09-21 | 88FS-6d | 0d |
| 91 |  | Instalación de cielo falso | 4d | 2024-09-20 | 2024-09-23 | 90FS-2d | 0d |
| 92 |  | Csontrucción de mamposteria | 7d | 2024-09-22 | 2024-09-28 | 91FS-2d | 0d |
| 93 |  | Construcción de revoque | 5d | 2024-09-26 | 2024-09-30 | 92FS-3d | 0d |
| 94 |  | Construcción de enchape | 5d | 2024-09-28 | 2024-10-02 | 93FS-3d | 0d |
| 95 |  | Resane y aplicación de pinturas | 5d | 2024-10-01 | 2024-10-05 | 94FS-2d | 0d |
| 96 |  | FIN EJECUCIÓN - FASE 2 | 0d | 2024-10-05 | 2024-10-05 | 95FF | 0d |
| 97 | 2.3 | **FASE 3** | 60d | 2024-10-06 | 2024-12-04 |  | 0d |
| 98 | 2.3.1 | **FASE 3-1** | 31d | 2024-10-06 | 2024-11-05 |  | 0d |
| 99 | 2.3.1.1 | **Red de aguas lluvias (Externa)** | 31d | 2024-10-06 | 2024-11-05 |  | 0d |
| 100 |  | Construcción de cerramientos | 2d | 2024-10-06 | 2024-10-07 | 96 | 0d |
| 101 |  | Localización y replanteo | 3d | 2024-10-08 | 2024-10-10 | 100 | 0d |
| 102 |  | Demoliciones y retiros | 6d | 2024-10-08 | 2024-10-13 | 101FS-3d | 0d |
| 103 |  | Excavaciones y entibados | 6d | 2024-10-10 | 2024-10-15 | 102FS-4d | 0d |
| 104 |  | Cargue de material de excavación | 6d | 2024-10-13 | 2024-10-18 | 103FS-3d | 0d |
| 105 |  | Nivelación y colocación de cama de triturado para tuberia | 8d | 2024-10-16 | 2024-10-23 | 104FS-3d | 0d |
| 106 |  | Instalación de tuberia | 8d | 2024-10-19 | 2024-10-26 | 105FS-5d | 0d |
| 107 |  | Construcción de llenos | 8d | 2024-10-21 | 2024-10-28 | 106FS-6d | 0d |
| 108 |  | Construcción de camaras de inspección 1,20 | 5d | 2024-10-28 | 2024-11-01 | 107FS-1d | 0d |
| 109 |  | Construcción de sumideros | 4d | 2024-11-02 | 2024-11-05 | 108 | 0d |
| 110 | 2.3.1.2 | **Obras civiles** | 23d | 2024-10-14 | 2024-11-05 |  | 43d |
| 111 |  | Construcción de losas | 13d | 2024-10-14 | 2024-10-26 | 96FS+8d | 43d |
| 112 |  | Construcción de andenes | 10d | 2024-10-27 | 2024-11-05 | 111 | 43d |
| 113 |  | FIN EJECUCIÓN - FASE 3-1 | 0d | 2024-11-05 | 2024-11-05 | 109 | 0d |
| 114 | 2.3.2 | **FASE 3-2** | 15d | 2024-11-06 | 2024-11-20 |  | 0d |
| 115 | 2.3.2.1 | **Red de aguas lluvias - (Externa)** | 15d | 2024-11-06 | 2024-11-20 |  | 28d |
| 116 |  | Construcción de cerramientos | 1d | 2024-11-06 | 2024-11-06 | 113 | 28d |
| 117 |  | Localización y replanteo | 1d | 2024-11-07 | 2024-11-07 | 116 | 28d |
| 118 |  | Demoliciones y retiros | 3d | 2024-11-08 | 2024-11-10 | 117 | 28d |
| 119 |  | Excavaciones y entibados | 3d | 2024-11-09 | 2024-11-11 | 118FS-2d | 28d |
| 120 |  | Cargue de material de excavación | 3d | 2024-11-10 | 2024-11-12 | 119FS-2d | 28d |
| 121 |  | Nivelación y colocación de cama de triturado para tuberia | 4d | 2024-11-11 | 2024-11-14 | 120FS-2d | 28d |
| 122 |  | Instalación de tuberia | 4d | 2024-11-12 | 2024-11-15 | 121FS-3d | 28d |
| 123 |  | Construcción de llenos | 4d | 2024-11-13 | 2024-11-16 | 122FS-3d | 28d |
| 124 |  | Construcción de camaras de inspección 1,20 | 3d | 2024-11-15 | 2024-11-17 | 123FS-2d | 28d |
| 125 |  | Construcción de carcamos | 5d | 2024-11-16 | 2024-11-20 | 124FS-2d | 28d |
| 126 | 2.3.2.2 | **Red de abastos (Edificio a tanque)** | 6d | 2024-11-06 | 2024-11-11 |  | 0d |
| 127 |  | Construcción de cerramientos | 1d | 2024-11-06 | 2024-11-06 | 113 | 0d |
| 128 |  | Demoliciones y retiros | 2d | 2024-11-07 | 2024-11-08 | 127 | 0d |
| 129 |  | Excavaciones y cargue | 2d | 2024-11-08 | 2024-11-09 | 128FS-1d | 0d |
| 130 |  | Instalación de tuberia a presión y accesorios | 3d | 2024-11-08 | 2024-11-10 | 129FS-2d | 0d |
| 131 |  | Construcción de llenos | 3d | 2024-11-09 | 2024-11-11 | 130FS-2d | 0d |
| 132 | 2.3.2.3 | **Estructura de tanques** | 9d | 2024-11-06 | 2024-11-14 |  | 0d |
| 133 |  | Construcción de cerramientos | 1d | 2024-11-06 | 2024-11-06 | 113 | 1d |
| 134 |  | Demoliciones | 2d | 2024-11-06 | 2024-11-07 | 133FS-1d | 1d |
| 135 |  | Excavaciones y entibados | 2d | 2024-11-07 | 2024-11-08 | 134FS-1d | 1d |
| 136 |  | Cargue de material de excavación | 2d | 2024-11-08 | 2024-11-09 | 135FS-1d | 1d |
| 137 |  | Construcción de llenos | 2d | 2024-11-09 | 2024-11-10 | 136FS-1d | 1d |
| 138 |  | Construcción de estructura de tanques | 5d | 2024-11-10 | 2024-11-14 | 137FS-2d, 131FS-2d | 0d |
| 139 | 2.3.2.4 | **Tanques** | 6d | 2024-11-15 | 2024-11-20 |  | 0d |
| 140 |  | Construcción de sistema de bombeo | 5d | 2024-11-15 | 2024-11-19 | 138 | 0d |

| ID | WBS | Task | Duration | Start | Finish | Predecessors | Total float |
| --- | --- | --- | --- | --- | --- | --- | --- |
| 141 |  | Instalación de tanques de almcenamiento | 5d | 2024-11-16 | 2024-11-20 | 140FS-4d | 0d |
| 142 |  | FIN EJECUCIÓN - FASE 3-2 | 0d | 2024-11-20 | 2024-11-20 | 141FF | 0d |
| 143 | 2.3.3 | **FASE 3-3** | 14d | 2024-11-21 | 2024-12-04 |  | 0d |
| 144 | 2.3.3.1 | **Red de aguas lluvias (Externa)** | 14d | 2024-11-21 | 2024-12-04 |  | 14d |
| 145 |  | Localización y replanteo | 1d | 2024-11-21 | 2024-11-21 | 142 | 14d |
| 146 |  | Demoliciones y retiros | 2d | 2024-11-22 | 2024-11-23 | 145 | 14d |
| 147 |  | Excavaciones y entibados | 2d | 2024-11-23 | 2024-11-24 | 146FS-1d | 14d |
| 148 |  | Cargue de material de excavación | 2d | 2024-11-24 | 2024-11-25 | 147FS-1d | 14d |
| 149 |  | Nivelación y colocación de cama de triturado para tuberia | 4d | 2024-11-25 | 2024-11-28 | 148FS-1d | 14d |
| 150 |  | Instalación de tuberia | 4d | 2024-11-26 | 2024-11-29 | 149FS-3d | 14d |
| 151 |  | Construcción de llenos | 4d | 2024-11-27 | 2024-11-30 | 150FS-3d | 14d |
| 152 |  | Construcción de camaras de inspección 1,20 | 4d | 2024-11-28 | 2024-12-01 | 151FS-3d | 14d |
| 153 |  | Construcción de sumideros | 3d | 2024-12-02 | 2024-12-04 | 152 | 14d |
| 154 | 2.3.3.2 | **Obras civiles** | 14d | 2024-11-21 | 2024-12-04 |  | 0d |
| 155 |  | Construcción de filtros | 5d | 2024-11-21 | 2024-11-25 | 142 | 0d |
| 156 |  | Construcción de losas | 5d | 2024-11-24 | 2024-11-28 | 155FS-2d | 0d |
| 157 |  | Construcción de andenes | 5d | 2024-11-27 | 2024-12-01 | 156FS-2d | 0d |
| 158 |  | Instalación de de grama tipo macana | 4d | 2024-12-01 | 2024-12-04 | 157FS-1d | 0d |
| 159 |  | FIN EJECUCIÓN - FASE 3-3 | 0d | 2024-12-04 | 2024-12-04 | 158FF | 0d |
| 160 | 2.4 | **FASE 4** | 14d | 2024-12-05 | 2024-12-18 |  | 0d |
| 161 |  | Pruebas y ensayos | 5d | 2024-12-05 | 2024-12-09 | 53, 96, 113, 142, 159 | 0d |
| 162 |  | Construcción de carpeta asfaltica | 5d | 2024-12-08 | 2024-12-12 | 161FS-2d | 0d |
| 163 |  | Señalización y demarcación vial | 6d | 2024-12-13 | 2024-12-18 | 162 | 0d |
| 164 | 3 | **ACTIVIDADES TRANSVERSALES** | 149d | 2024-07-22 | 2024-12-17 |  | 1d |
| 165 |  | INVERSIÓN GESTIÓN SOCIAL Y COMUNICACIONES | 149d | 2024-07-22 | 2024-12-17 | 1SS | 1d |
| 166 |  | INVERSIÓN GESTIÓN AMBIENTAL | 149d | 2024-07-22 | 2024-12-17 | 1SS | 1d |
| 167 |  | INVERSIÓN SEGURIDAD Y SALUD EN EL TRABAJO | 149d | 2024-07-22 | 2024-12-17 | 1SS | 1d |
| 168 |  | PRESUPUESTO PLAN DE MANEJO DE TRANSITO | 149d | 2024-07-22 | 2024-12-17 | 1SS | 1d |
| 169 |  | POLIZAS | 0d | 2024-07-22 | 2024-07-22 | 1SS | 150d |
| 170 |  | FIN DEL PROYECTO | 0d | 2024-12-18 | 2024-12-18 | 13, 23, 33, 42, 65, 75, 85, 125, 141, 153, 163, 165, 166, 167, 168, 169, 112 | 0d |

## Version 2 (data date 2024-08-20, saved 2024-08-20, file version3.mpp)

Note of the change: add new fns

Last finish stays 2024-12-18. Complete tasks 0 → 20.

Changed:

| ID | Task | Start | Finish | Complete | Total float |
| --- | --- | --- | --- | --- | --- |
| 1 | INICIO DEL PROYECTO | 2024-07-22 A | 2024-07-22 A | 0% → 100% | 0d → none |
| 2 | **EJECUCIÓN DE LA OBRA** | 2024-07-22 A |  | 0% → 23% |  |
| 3 | **FASE 1** | 2024-07-22 A |  | 0% → 54% | 23d → 105d |
| 4 | **Red aguas residuales (Externa)** | 2024-07-22 A |  | 0% → 67% |  |
| 5 | Construcción de cerramientos y campamentos | 2024-07-22 A | 2024-07-29 A | 0% → 100% | 105d → none |
| 6 | Localización y replanteo | 2024-07-25 A | 2024-08-03 A | 0% → 100% | 105d → none |
| 7 | Demoliciones y retiros | 2024-08-01 A | 2024-08-10 A | 0% → 100% | 105d → none |
| 8 | Excavaciones y entibados | 2024-08-05 A | 2024-08-14 A | 0% → 100% | 105d → none |
| 9 | Cargue de material de excavación | 2024-08-08 A | 2024-08-17 A | 0% → 100% | 105d → none |
| 10 | Nivelación y colocación de cama de triturado para tuberia | 2024-08-12 A |  | 0% → 81% | 105d → 3.11d |
| 11 | Instalación de tuberia novafort | 2024-08-17 A |  | 0% → 31% |  |
| 14 | **Red aguas lluvias (Externa)** | 2024-08-01 A |  | 0% → 54% |  |
| 15 | Localización y replanteo | 2024-08-01 A | 2024-08-05 A | 0% → 100% | 105d → none |
| 16 | Demoliciones y retiros | 2024-08-06 A | 2024-08-12 A | 0% → 100% | 105d → none |
| 17 | Excavaciones y entibados | 2024-08-09 A | 2024-08-15 A | 0% → 100% | 105d → none |
| 18 | Cargue de material de excavación | 2024-08-12 A | 2024-08-18 A | 0% → 100% | 105d → none |
| 19 | Nivelación y colocación de cama de triturado para tuberia | 2024-08-15 A |  | 0% → 73% | 105d → 2.11d |
| 20 | Instalación de tuberia | 2024-08-18 A |  | 0% → 30% |  |
| 24 | **Red de aguas residuales (Sotano)** | 2024-08-01 A |  | 0% → 51% |  |
| 25 | Localización y replanteo | 2024-08-01 A | 2024-08-05 A | 0% → 100% | 105d → none |
| 26 | Diagnostico de redes | 2024-08-06 A | 2024-08-08 A | 0% → 100% | 105d → none |
| 27 | Demoliciones y retiros | 2024-08-09 A | 2024-08-15 A | 0% → 100% | 105d → none |
| 28 | Excavaciones y entibados | 2024-08-12 A | 2024-08-18 A | 0% → 100% | 105d → none |
| 29 | Cargue de material de excavación | 2024-08-15 A |  | 0% → 73% | 105d → 2.11d |
| 30 | Nivelación y colocación de cama de triturado para tuberia | 2024-08-18 A |  | 0% → 30% |  |
| 34 | **Red de aguas lluvias (Sotano)** | 2024-08-05 A |  | 0% → 54% |  |
| 35 | Localización y replanteo | 2024-08-05 A | 2024-08-06 A | 0% → 100% | 105d → none |
| 36 | Demoliciones y retiros | 2024-08-06 A | 2024-08-12 A | 0% → 100% | 105d → none |
| 37 | Excavaciones y entibados | 2024-08-10 A | 2024-08-16 A | 0% → 100% | 105d → none |
| 38 | Cargue de material de excavación | 2024-08-12 A | 2024-08-18 A | 0% → 100% | 105d → none |
| 39 | Nivelación y colocación de cama de triturado para tuberia | 2024-08-15 A |  | 0% → 64% | 105d → 1.11d |
| 40 | Instalación de tuberia | 2024-08-19 A |  | 0% → 14% |  |
| 43 | **Red de abastos (Edificio)** | 2024-08-14 A |  | 0% → 84% | 0d → 4.11d |
| 44 | Retiros | 2024-08-14 A | 2024-08-18 A | 0% → 100% | 0d → none |
| 45 | Instalación de tuberia a presión y accesorios | 2024-08-15 A |  | 0% → 73% | 0d → 4.11d |
| 46 | **Obras civiles** | 2024-08-16 A |  | 0% → 13% |  |
| 47 | Construcción de buitrones | 2024-08-16 A |  | 0% → 59% |  |
| 164 | **ACTIVIDADES TRANSVERSALES** | 2024-07-22 A |  | 0% → 20% |  |
| 165 | INVERSIÓN GESTIÓN SOCIAL Y COMUNICACIONES | 2024-07-22 A |  | 0% → 20% |  |
| 166 | INVERSIÓN GESTIÓN AMBIENTAL | 2024-07-22 A |  | 0% → 20% |  |
| 167 | INVERSIÓN SEGURIDAD Y SALUD EN EL TRABAJO | 2024-07-22 A |  | 0% → 20% |  |
| 168 | PRESUPUESTO PLAN DE MANEJO DE TRANSITO | 2024-07-22 A |  | 0% → 20% |  |
| 169 | POLIZAS | 2024-07-22 A | 2024-07-22 A | 0% → 100% | 150d → none |
